# UJD_VN_Project_Schedule

Schedule from MS Project, 2014-05-12 to 2014-08-22.

## Calendars

- Standard: Mon-Fri 08:00-12:00, 13:00-17:00; Sat-Sun off.

## Resources

| Resource |
| --- |
| Project Team |
| NamLD |
| MinhPT |
| DatPT |
| TuanNN |

## Schedule

| ID | WBS | Task | Type | Duration | Start | Finish | Predecessors | Baseline start | Baseline finish | Baseline duration | Total slack | Resources | Work |
| --- | --- | --- | --- | --- | --- | --- | --- | --- | --- | --- | --- | --- | --- |
| 1 | 1 | **UJD_VN** |  | 75d | 2014-05-12 08:00 | 2014-08-22 17:00 |  | 2014-05-12 08:00 | 2014-08-22 17:00 | 75d |  |  | 2400h |
| 2 | 1.1 | **Initiation** |  | 15d | 2014-05-12 08:00 | 2014-05-30 17:00 |  | 2014-05-12 08:00 | 2014-05-30 17:00 | 15d | 0d |  | 580h |
| 3 | 1.1.1 | Develop project Idea | manual | 1d | 2014-05-12 08:00 | 2014-05-12 17:00 |  | 2014-05-12 08:00 | 2014-05-12 17:00 | 1d |  | DatPT; MinhPT; NamLD; TuanNN | 32h |
| 4 | 1.1.2 | Prepare project | manual | 0.5d | 2014-05-13 08:00 | 2014-05-13 12:00 | 3 | 2014-05-13 08:00 | 2014-05-13 12:00 | 0.5d |  | DatPT; MinhPT; NamLD; TuanNN | 16h |
| 5 | 1.1.3 | Q & A Management | manual | 0.5d | 2014-05-13 13:00 | 2014-05-13 17:00 | 4 | 2014-05-13 13:00 | 2014-05-13 17:00 | 0.5d |  | TuanNN | 4h |
| 6 | 1.1.4 | **Develop report no.1: Introduction** |  | 6d | 2014-05-13 08:00 | 2014-05-20 17:00 |  | 2014-05-13 08:00 | 2014-05-20 17:00 | 6d |  |  | 144h |
| 7 | 1.1.4.1 | System feasible study | manual | 1d | 2014-05-13 08:00 | 2014-05-13 17:00 | 3 | 2014-05-13 08:00 | 2014-05-13 17:00 | 1d |  | DatPT; MinhPT; NamLD; TuanNN | 32h |
| 8 | 1.1.4.2 | Define business situation | manual | 1d | 2014-05-13 08:00 | 2014-05-13 17:00 | 3 | 2014-05-13 08:00 | 2014-05-13 17:00 | 1d |  | DatPT; MinhPT; NamLD; TuanNN | 32h |
| 9 | 1.1.4.3 | Define project and system scope | manual | 1d | 2014-05-14 08:00 | 2014-05-14 17:00 | 7, 8 | 2014-05-14 08:00 | 2014-05-14 17:00 | 1d |  | DatPT; MinhPT; NamLD; TuanNN | 32h |
| 10 | 1.1.4.4 | Review & update report no.1 : Draft vesion | manual | 0.5d | 2014-05-15 08:00 | 2014-05-15 12:00 | 9 | 2014-05-15 08:00 | 2014-05-15 12:00 | 0.5d |  | MinhPT; TuanNN | 8h |
| 11 | 1.1.4.5 | Submit report no.1 first version | manual | 0.5d | 2014-05-15 13:00 | 2014-05-15 17:00 | 10 | 2014-05-15 13:00 | 2014-05-15 17:00 | 0.5d |  | MinhPT; TuanNN | 8h |
| 12 | 1.1.4.6 | Revise after got comments for report no.1 | manual | 1d | 2014-05-16 08:00 | 2014-05-16 17:00 | 11 | 2014-05-16 08:00 | 2014-05-16 17:00 | 1d |  | MinhPT; TuanNN | 16h |
| 13 | 1.1.4.7 | Kick-off meeting | milestone, manual | 0d | 2014-05-19 08:00 | 2014-05-19 08:00 | 12 | 2014-05-19 08:00 | 2014-05-19 08:00 |  |  | Project Team |  |
| 14 | 1.1.4.8 | Progress Report 1 | manual | 1d | 2014-05-19 08:00 | 2014-05-19 17:00 | 12 | 2014-05-19 08:00 | 2014-05-19 17:00 | 1d |  | TuanNN; MinhPT | 16h |
| 15 | 1.1.4.9 | Submit report no.1 final version | milestone, manual | 0d | 2014-05-20 08:00 | 2014-05-20 08:00 | 13 | 2014-05-20 08:00 | 2014-05-20 08:00 |  |  | MinhPT |  |
| 16 | 1.1.5 | **Technologies** |  | 9d | 2014-05-15 08:00 | 2014-05-27 17:00 |  | 2014-05-15 08:00 | 2014-05-27 17:00 | 9d |  |  | 136h |
| 17 | 1.1.5.1 | Research development technology | manual | 2d | 2014-05-15 08:00 | 2014-05-16 17:00 | 9 | 2014-05-15 08:00 | 2014-05-16 17:00 | 2d |  | DatPT; NamLD | 32h |
| 18 | 1.1.5.2 | Install and configuration PHP with Xampp | manual | 0.5d | 2014-05-19 08:00 | 2014-05-19 12:00 | 17 | 2014-05-19 08:00 | 2014-05-19 12:00 | 0.5d |  | NamLD; DatPT | 8h |
| 19 | 1.1.5.3 | Study Xampp and PHP, MYSQL | manual | 6d | 2014-05-19 13:00 | 2014-05-27 12:00 | 18 | 2014-05-19 13:00 | 2014-05-27 12:00 | 6d |  | DatPT; NamLD | 96h |
| 20 | 1.1.6 | **Requirements** |  | 9d | 2014-05-20 08:00 | 2014-05-30 17:00 |  | 2014-05-20 08:00 | 2014-05-30 17:00 | 9d |  |  | 144h |
| 21 | 1.1.6.1 | Collect business requirements and processes | manual | 1d | 2014-05-20 08:00 | 2014-05-20 17:00 | 15 | 2014-05-20 08:00 | 2014-05-20 17:00 | 1d |  | MinhPT; TuanNN | 16h |
| 22 | 1.1.6.2 | Create draft screen prototypes | manual | 6d | 2014-05-21 08:00 | 2014-05-28 17:00 | 21 | 2014-05-21 08:00 | 2014-05-28 17:00 | 6d |  | DatPT; TuanNN | 96h |
| 23 | 1.1.6.3 | Review and edit screen prototypes | manual | 1d | 2014-05-29 08:00 | 2014-05-29 17:00 | 22 | 2014-05-29 08:00 | 2014-05-29 17:00 | 1d |  | DatPT; TuanNN; MinhPT; NamLD | 32h |
| 24 | 1.1.6.4 | Complete screen prototype | milestone, manual | 0d | 2014-05-30 08:00 | 2014-05-30 08:00 | 23 | 2014-05-30 08:00 | 2014-05-30 08:00 |  |  | DatPT; TuanNN |  |

| ID | WBS | Task | Type | Duration | Start | Finish | Predecessors | Baseline start | Baseline finish | Baseline duration | Resources | Work |
| --- | --- | --- | --- | --- | --- | --- | --- | --- | --- | --- | --- | --- |
| 25 | 1.1.7 | **Develop Project Plan** |  | 9d | 2014-05-20 08:00 | 2014-05-30 17:00 |  | 2014-05-20 08:00 | 2014-05-30 17:00 | 9d |  | 104h |
| 26 | 1.1.7.1 | Develop project definition | manual | 1d | 2014-05-20 10:00 | 2014-05-21 10:00 | 13 | 2014-05-20 10:00 | 2014-05-21 10:00 | 1d | NamLD; MinhPT | 16h |
| 27 | 1.1.7.2 | Work BreakDown Structure | manual | 0.5d | 2014-05-22 08:00 | 2014-05-22 12:00 | 26 | 2014-05-22 08:00 | 2014-05-22 12:00 | 0.5d | NamLD; MinhPT | 8h |
| 28 | 1.1.7.3 | Create project schedule | manual | 1d | 2014-05-23 08:00 | 2014-05-23 17:00 | 27 | 2014-05-23 08:00 | 2014-05-23 17:00 | 1d | NamLD; MinhPT | 16h |
| 29 | 1.1.7.4 | **Develop report no.2: Project management Plan** |  | 6d | 2014-05-24 08:00 | 2014-05-30 17:00 |  | 2014-05-24 08:00 | 2014-05-30 17:00 | 6d |  | 64h |
| 30 | 1.1.7.4.1 | Create Project plan first version | manual | 2d | 2014-05-24 08:00 | 2014-05-26 17:00 | 28 | 2014-05-24 08:00 | 2014-05-26 17:00 | 2d | NamLD; MinhPT | 32h |
| 31 | 1.1.7.4.2 | Submit report no.2 first version | milestone, manual | 0d | 2014-05-27 08:00 | 2014-05-27 08:00 | 30 | 2014-05-27 08:00 | 2014-05-27 08:00 |  | NamLD |  |
| 32 | 1.1.7.4.3 | Revise after got comments for report no.2 | manual | 1d | 2014-05-27 08:00 | 2014-05-27 17:00 | 31 | 2014-05-27 08:00 | 2014-05-27 17:00 | 1d | NamLD; MinhPT | 16h |
| 33 | 1.1.7.4.4 | Complete Project Plan Final Version | milestone, manual | 0d | 2014-05-28 08:00 | 2014-05-28 08:00 | 32 | 2014-05-28 08:00 | 2014-05-28 08:00 |  | NamLD |  |
| 34 | 1.1.7.4.5 | Progress Report 2 | manual | 1d | 2014-05-29 08:00 | 2014-05-29 17:00 | 32 | 2014-05-29 08:00 | 2014-05-29 17:00 | 1d | TuanNN; MinhPT | 16h |
| 35 | 1.1.7.4.6 | Submit report no.2 final version | milestone, manual | 0d | 2014-05-30 08:00 | 2014-05-30 08:00 | 32 | 2014-05-30 08:00 | 2014-05-30 08:00 |  | NamLD |  |
| 36 | 1.2 | **Solution** |  | 22d | 2014-06-02 08:00 | 2014-07-01 17:00 |  | 2014-06-02 08:00 | 2014-07-01 17:00 | 22d |  | 832h |
| 37 | 1.2.1 | **Project Management** |  | 3d | 2014-06-02 08:00 | 2014-06-04 17:00 |  | 2014-06-02 08:00 | 2014-06-04 17:00 | 3d |  | 32h |
| 38 | 1.2.1.1 | Refine project plan | manual | 2d | 2014-06-02 08:00 | 2014-06-03 17:00 | 35 | 2014-06-02 08:00 | 2014-06-03 17:00 | 2d | NamLD; MinhPT | 32h |
| 39 | 1.2.2 | **Technologies** |  | 7d | 2014-06-02 08:00 | 2014-06-10 17:00 |  | 2014-06-02 08:00 | 2014-06-10 17:00 | 7d |  | 160h |
| 40 | 1.2.2.1 | Design database models | manual | 1d | 2014-06-02 08:00 | 2014-06-02 17:00 | 35 | 2014-06-02 08:00 | 2014-06-02 17:00 | 1d | DatPT; NamLD | 16h |
| 41 | 1.2.2.2 | Coding prototypes | manual | 6d | 2014-06-03 08:00 | 2014-06-10 17:00 | 40 | 2014-06-03 08:00 | 2014-06-10 17:00 | 6d | DatPT; NamLD; TuanNN | 144h |
| 42 | 1.2.3 | **User Requirements Specification** |  | 5d | 2014-06-02 08:00 | 2014-06-06 17:00 |  | 2014-06-02 08:00 | 2014-06-06 17:00 | 5d |  | 112h |
| 43 | 1.2.3.1 | Create draft requirements | manual | 2d | 2014-06-02 08:00 | 2014-06-03 17:00 | 35 | 2014-06-02 08:00 | 2014-06-03 17:00 | 2d | MinhPT; TuanNN | 32h |
| 44 | 1.2.3.2 | Complete draft requirements | milestone, manual | 0d | 2014-06-04 08:00 | 2014-06-04 08:00 | 43 | 2014-06-04 08:00 | 2014-06-04 08:00 |  | MinhPT; TuanNN |  |
| 45 | 1.2.3.3 | Develop Use-case model | manual | 1d | 2014-06-04 08:00 | 2014-06-04 17:00 | 44 | 2014-06-04 08:00 | 2014-06-04 17:00 | 1d | MinhPT; TuanNN | 16h |
| 46 | 1.2.3.4 | Develop main functions and processes | manual | 2d | 2014-06-05 08:00 | 2014-06-06 17:00 | 45 | 2014-06-05 08:00 | 2014-06-06 17:00 | 2d | DatPT; NamLD; MinhPT; TuanNN | 64h |
| 47 | 1.2.4 | **Software Requirements Specification** |  | 10d | 2014-06-09 08:00 | 2014-06-20 17:00 |  | 2014-06-09 08:00 | 2014-06-20 17:00 | 10d |  | 130h |
| 48 | 1.2.4.1 | **Functional Requirement Specification** |  | 10d | 2014-06-09 08:00 | 2014-06-20 17:00 |  | 2014-06-09 08:00 | 2014-06-20 17:00 | 10d |  | 110h |
| 49 | 1.2.4.1.1 | **Part 1** |  | 6d | 2014-06-09 08:00 | 2014-06-16 17:00 |  | 2014-06-09 08:00 | 2014-06-16 17:00 | 6d |  | 84h |
| 50 | 1.2.4.1.1.1 | Homepage Module | manual | 1d | 2014-06-09 08:00 | 2014-06-09 17:00 | 42 | 2014-06-09 08:00 | 2014-06-09 17:00 | 1d | TuanNN | 8h |

| ID | WBS | Task | Type | Duration | Start | Finish | Predecessors | Baseline start | Baseline finish | Baseline duration | Resources | Work |
| --- | --- | --- | --- | --- | --- | --- | --- | --- | --- | --- | --- | --- |
| 51 | 1.2.4.1.1.2 | **Admin Module** |  | 5d | 2014-06-10 08:00 | 2014-06-16 17:00 |  | 2014-06-10 08:00 | 2014-06-16 17:00 | 5d |  | 40h |
| 52 | 1.2.4.1.1.2.1 | Admin’s account management Module | manual | 0.5d | 2014-06-10 08:00 | 2014-06-10 12:00 | 50 | 2014-06-10 08:00 | 2014-06-10 12:00 | 0.5d | TuanNN | 4h |
| 53 | 1.2.4.1.1.2.2 | Management Member’s account Module | manual | 0.5d | 2014-06-10 13:00 | 2014-06-10 17:00 | 52 | 2014-06-10 13:00 | 2014-06-10 17:00 | 0.5d | TuanNN | 4h |
| 54 | 1.2.4.1.1.2.3 | Vocabulary Management Module | manual | 0.5d | 2014-06-11 08:00 | 2014-06-11 12:00 | 53 | 2014-06-11 08:00 | 2014-06-11 12:00 | 0.5d | TuanNN | 4h |
| 55 | 1.2.4.1.1.2.4 | Grammar Management Module | manual | 0.5d | 2014-06-11 13:00 | 2014-06-11 17:00 | 54 | 2014-06-11 13:00 | 2014-06-11 17:00 | 0.5d | TuanNN | 4h |
| 56 | 1.2.4.1.1.2.5 | Reading Document Management Module | manual | 0.5d | 2014-06-12 08:00 | 2014-06-12 12:00 | 55 | 2014-06-12 08:00 | 2014-06-12 12:00 | 0.5d | TuanNN | 4h |
| 57 | 1.2.4.1.1.2.6 | Conversation management Module | manual | 0.5d | 2014-06-12 13:00 | 2014-06-12 17:00 | 56 | 2014-06-12 13:00 | 2014-06-12 17:00 | 0.5d | TuanNN | 4h |
| 58 | 1.2.4.1.1.2.7 | Video Management Module | manual | 0.5d | 2014-06-13 08:00 | 2014-06-13 12:00 | 57 | 2014-06-13 08:00 | 2014-06-13 12:00 | 0.5d | TuanNN | 4h |
| 59 | 1.2.4.1.1.2.8 | Listening Article Management Module | manual | 0.5d | 2014-06-13 13:00 | 2014-06-13 17:00 | 58 | 2014-06-13 13:00 | 2014-06-13 17:00 | 0.5d | TuanNN | 4h |
| 60 | 1.2.4.1.1.2.9 | Doing test management Module | manual | 0.5d | 2014-06-16 08:00 | 2014-06-16 12:00 | 59 | 2014-06-16 08:00 | 2014-06-16 12:00 | 0.5d | TuanNN | 4h |
| 61 | 1.2.4.1.1.2.10 | Contact's content management Module | manual | 0.5d | 2014-06-16 13:00 | 2014-06-16 17:00 | 60 | 2014-06-16 13:00 | 2014-06-16 17:00 | 0.5d | TuanNN | 4h |
| 62 | 1.2.4.1.1.3 | **Search Module** |  | 3d | 2014-06-10 08:00 | 2014-06-12 17:00 |  | 2014-06-10 08:00 | 2014-06-12 17:00 | 3d |  | 20h |
| 63 | 1.2.4.1.1.3.1 | Search Sentences Module | manual | 0.5d | 2014-06-10 08:00 | 2014-06-10 12:00 | 50 | 2014-06-10 08:00 | 2014-06-10 12:00 | 0.5d | MinhPT | 4h |
| 64 | 1.2.4.1.1.3.2 | Search Conversation Module | manual | 0.5d | 2014-06-10 13:00 | 2014-06-10 17:00 | 63 | 2014-06-10 13:00 | 2014-06-10 17:00 | 0.5d | MinhPT | 4h |
| 65 | 1.2.4.1.1.3.3 | Search Video Module | manual | 0.5d | 2014-06-11 08:00 | 2014-06-11 12:00 | 64 | 2014-06-11 08:00 | 2014-06-11 12:00 | 0.5d | MinhPT | 4h |
| 66 | 1.2.4.1.1.3.4 | Search Grammar Module | manual | 0.5d | 2014-06-11 13:00 | 2014-06-11 17:00 | 65 | 2014-06-11 13:00 | 2014-06-11 17:00 | 0.5d | MinhPT | 4h |
| 67 | 1.2.4.1.1.3.5 | Search Specialized Japanese Module | manual | 0.5d | 2014-06-12 08:00 | 2014-06-12 12:00 | 66 | 2014-06-12 08:00 | 2014-06-12 12:00 | 0.5d | MinhPT | 4h |
| 68 | 1.2.4.1.1.4 | Login/Logout Module | manual | 0.5d | 2014-06-12 13:00 | 2014-06-12 17:00 | 67 | 2014-06-12 13:00 | 2014-06-12 17:00 | 0.5d | MinhPT | 4h |
| 69 | 1.2.4.1.1.5 | Register Account Module | manual | 0.5d | 2014-06-13 08:00 | 2014-06-13 12:00 | 68 | 2014-06-13 08:00 | 2014-06-13 12:00 | 0.5d | MinhPT | 4h |
| 70 | 1.2.4.1.1.6 | Edit Profile Module | manual | 0.5d | 2014-06-13 13:00 | 2014-06-13 17:00 | 69 | 2014-06-13 13:00 | 2014-06-13 17:00 | 0.5d | MinhPT | 4h |
| 71 | 1.2.4.1.1.7 | Forgot Password Module | manual | 0.5d | 2014-06-16 08:00 | 2014-06-16 12:00 | 70 | 2014-06-16 08:00 | 2014-06-16 12:00 | 0.5d | MinhPT | 4h |
| 72 | 1.2.4.1.2 | **Part 2** |  | 5d | 2014-06-16 08:00 | 2014-06-20 17:00 |  | 2014-06-16 08:00 | 2014-06-20 17:00 | 5d |  | 26h |
| 73 | 1.2.4.1.2.1 | Contact Admin Module | manual | 1.5d | 2014-06-17 08:00 | 2014-06-18 12:00 | 61 | 2014-06-17 08:00 | 2014-06-18 12:00 | 1.5d | TuanNN | 12h |
| 74 | 1.2.4.1.2.2 | Doing Test Module | manual | 0.5d | 2014-06-18 13:00 | 2014-06-18 17:00 | 73 | 2014-06-18 13:00 | 2014-06-18 17:00 | 0.5d | TuanNN | 4h |
| 75 | 1.2.4.1.2.3 | Reading Document Module | manual | 0.5d | 2014-06-19 08:00 | 2014-06-19 12:00 | 74 | 2014-06-19 08:00 | 2014-06-19 12:00 | 0.5d | TuanNN | 4h |
| 76 | 1.2.4.1.2.4 | Training Listening Module | manual | 0.5d | 2014-06-19 13:00 | 2014-06-19 17:00 | 75 | 2014-06-19 13:00 | 2014-06-19 17:00 | 0.5d | TuanNN | 4h |
| 77 | 1.2.4.1.2.5 | Listening Conversation Module | manual | 0.25d | 2014-06-20 08:00 | 2014-06-20 10:00 | 76 | 2014-06-20 08:00 | 2014-06-20 10:00 | 0.25d | TuanNN | 2h |

| ID | WBS | Task | Type | Duration | Start | Finish | Predecessors | Baseline start | Baseline finish | Baseline duration | Total slack | Resources | Work |
| --- | --- | --- | --- | --- | --- | --- | --- | --- | --- | --- | --- | --- | --- |
| 78 | 1.2.4.2 | **Non-functional Requirements Specification** |  | 1d | 2014-06-09 08:00 | 2014-06-09 17:00 |  | 2014-06-09 08:00 | 2014-06-09 17:00 | 1d |  |  | 16h |
| 79 | 1.2.4.2.1 | Develop User Interface requirements | manual | 1d | 2014-06-09 08:00 | 2014-06-09 17:00 | 46 | 2014-06-09 08:00 | 2014-06-09 17:00 | 1d |  | DatPT | 8h |
| 80 | 1.2.4.2.2 | Develop Performance requirements | manual | 1d | 2014-06-09 08:00 | 2014-06-09 17:00 | 45 | 2014-06-09 08:00 | 2014-06-09 17:00 | 1d |  | MinhPT | 8h |
| 81 | 1.2.4.3 | Submit report no.3 First version | milestone, manual | 0d | 2014-06-20 10:00 | 2014-06-20 10:00 | 77 | 2014-06-20 10:00 | 2014-06-20 10:00 |  |  | TuanNN |  |
| 82 | 1.2.4.4 | Revise after got comments of Report no.3 | manual | 0.25d | 2014-06-20 10:00 | 2014-06-20 12:00 | 81 | 2014-06-20 10:00 | 2014-06-20 12:00 | 0.25d |  | TuanNN | 2h |
| 83 | 1.2.4.5 | Complete SRS Final Version | milestone, manual | 0d | 2014-06-20 13:00 | 2014-06-20 13:00 | 82 | 2014-06-20 13:00 | 2014-06-20 13:00 |  |  | TuanNN |  |
| 84 | 1.2.4.6 | Progress Report 3 | manual | 0.25d | 2014-06-20 13:00 | 2014-06-20 15:00 | 82 | 2014-06-20 13:00 | 2014-06-20 15:00 | 0.25d |  | TuanNN | 2h |
| 85 | 1.2.4.7 | Submit report no.3 final version | milestone, manual | 0d | 2014-06-20 15:00 | 2014-06-20 15:00 | 84 | 2014-06-20 15:00 | 2014-06-20 15:00 |  |  | TuanNN |  |
| 86 | 1.2.5 | **Design** |  | 17d | 2014-06-09 08:00 | 2014-07-01 17:00 |  | 2014-06-09 08:00 | 2014-07-01 17:00 | 17d |  |  | 206h |
| 87 | 1.2.5.1 | **System Architectural Design** |  | 4d | 2014-06-09 08:00 | 2014-06-12 17:00 | 42 | 2014-06-09 08:00 | 2014-06-12 17:00 | 4d |  |  | 48h |
| 88 | 1.2.5.1.1 | Define the system structure and collect system features | manual | 1d | 2014-06-09 08:00 | 2014-06-09 17:00 | 46 | 2014-06-09 08:00 | 2014-06-09 17:00 | 1d |  | NamLD | 8h |
| 89 | 1.2.5.1.2 | Study the common System Architeture | manual | 1d | 2014-06-10 08:00 | 2014-06-10 17:00 | 88 | 2014-06-10 08:00 | 2014-06-10 17:00 | 1d |  | NamLD | 8h |
| 90 | 1.2.5.1.3 | Choice of System Architeture | manual | 1d | 2014-06-11 08:00 | 2014-06-11 17:00 | 89 | 2014-06-11 08:00 | 2014-06-11 17:00 | 1d |  | NamLD; DatPT | 16h |
| 91 | 1.2.5.1.4 | Discussion of Alternative Design | manual | 1d | 2014-06-12 08:00 | 2014-06-12 17:00 | 90 | 2014-06-12 08:00 | 2014-06-12 17:00 | 1d |  | NamLD; DatPT | 16h |
| 92 | 1.2.5.2 | **Detailed Design** |  | 16d | 2014-06-10 08:00 | 2014-07-01 17:00 |  | 2014-06-10 08:00 | 2014-07-01 17:00 | 16d |  |  | 152h |
| 93 | 1.2.5.2.1 | **Component Diagram** |  | 2d | 2014-06-10 08:00 | 2014-06-11 17:00 |  | 2014-06-10 08:00 | 2014-06-11 17:00 | 2d |  |  | 24h |
| 94 | 1.2.5.2.1.1 | Define the component | manual | 0.5d | 2014-06-10 08:00 | 2014-06-10 12:00 | 79 | 2014-06-10 08:00 | 2014-06-10 12:00 | 0.5d |  | DatPT | 4h |
| 95 | 1.2.5.2.1.2 | General component diagram | manual | 0.5d | 2014-06-10 13:00 | 2014-06-10 17:00 | 94 | 2014-06-10 13:00 | 2014-06-10 17:00 | 0.5d |  | DatPT | 4h |
| 96 | 1.2.5.2.1.3 | Detail component diagram | manual | 0.5d | 2014-06-11 08:00 | 2014-06-11 12:00 | 95 | 2014-06-11 08:00 | 2014-06-11 12:00 | 0.5d |  | DatPT; NamLD | 8h |
| 97 | 1.2.5.2.1.4 | Detail Database Design | manual | 0.5d | 2014-06-11 13:00 | 2014-06-11 17:00 | 96 | 2014-06-11 13:00 | 2014-06-11 17:00 | 0.5d |  | DatPT; NamLD | 8h |
| 98 | 1.2.5.2.2 | **User Interface Design** |  | 11d | 2014-06-12 08:00 | 2014-06-26 17:00 |  | 2014-06-12 08:00 | 2014-06-26 17:00 | 11d | 0d |  | 128h |
| 99 | 1.2.5.2.2.1 | **Part 1** |  | 6d | 2014-06-12 08:00 | 2014-06-19 17:00 |  | 2014-06-12 08:00 | 2014-06-19 17:00 | 6d |  |  | 84h |
| 100 | 1.2.5.2.2.1.1 | Homepage Module | manual | 1d | 2014-06-12 08:00 | 2014-06-12 17:00 | 97 | 2014-06-12 08:00 | 2014-06-12 17:00 | 1d |  | DatPT | 8h |
| 101 | 1.2.5.2.2.1.2 | **Admin Module** |  | 5d | 2014-06-13 08:00 | 2014-06-19 17:00 |  | 2014-06-13 08:00 | 2014-06-19 17:00 | 5d |  |  | 40h |
| 102 | 1.2.5.2.2.1.2.1 | Admin’s account management Module | manual | 0.5d | 2014-06-13 08:00 | 2014-06-13 12:00 | 91 | 2014-06-13 08:00 | 2014-06-13 12:00 | 0.5d |  | NamLD | 4h |
| 103 | 1.2.5.2.2.1.2.2 | Management Member’s account Module | manual | 0.5d | 2014-06-13 13:00 | 2014-06-13 17:00 | 102 | 2014-06-13 13:00 | 2014-06-13 17:00 | 0.5d |  | NamLD | 4h |
| 104 | 1.2.5.2.2.1.2.3 | Vocabulary Management Module | manual | 0.5d | 2014-06-16 08:00 | 2014-06-16 12:00 | 103 | 2014-06-16 08:00 | 2014-06-16 12:00 | 0.5d |  | NamLD | 4h |
| 105 | 1.2.5.2.2.1.2.4 | Grammar Management Module | manual | 0.5d | 2014-06-16 13:00 | 2014-06-16 17:00 | 104 | 2014-06-16 13:00 | 2014-06-16 17:00 | 0.5d |  | NamLD | 4h |
| 106 | 1.2.5.2.2.1.2.5 | Reading Document Management Module | manual | 0.5d | 2014-06-17 08:00 | 2014-06-17 12:00 | 105 | 2014-06-17 08:00 | 2014-06-17 12:00 | 0.5d |  | NamLD | 4h |
| 107 | 1.2.5.2.2.1.2.6 | Conversation management Module | manual | 0.5d | 2014-06-17 13:00 | 2014-06-17 17:00 | 106 | 2014-06-17 13:00 | 2014-06-17 17:00 | 0.5d |  | NamLD | 4h |
| 108 | 1.2.5.2.2.1.2.7 | Video Management Module | manual | 0.5d | 2014-06-18 08:00 | 2014-06-18 12:00 | 107 | 2014-06-18 08:00 | 2014-06-18 12:00 | 0.5d |  | NamLD | 4h |
| 109 | 1.2.5.2.2.1.2.8 | Listening Article Management Module | manual | 0.5d | 2014-06-18 13:00 | 2014-06-18 17:00 | 108 | 2014-06-18 13:00 | 2014-06-18 17:00 | 0.5d |  | NamLD | 4h |
| 110 | 1.2.5.2.2.1.2.9 | Doing test management Module | manual | 0.5d | 2014-06-19 08:00 | 2014-06-19 12:00 | 109 | 2014-06-19 08:00 | 2014-06-19 12:00 | 0.5d |  | NamLD | 4h |
| 111 | 1.2.5.2.2.1.2.10 | Contact's content management Module | manual | 0.5d | 2014-06-19 13:00 | 2014-06-19 17:00 | 110 | 2014-06-19 13:00 | 2014-06-19 17:00 | 0.5d |  | NamLD | 4h |

| ID | WBS | Task | Type | Duration | Start | Finish | Predecessors | Baseline start | Baseline finish | Baseline duration | Total slack | Resources | Work |
| --- | --- | --- | --- | --- | --- | --- | --- | --- | --- | --- | --- | --- | --- |
| 112 | 1.2.5.2.2.1.3 | **Search Module** |  | 5d | 2014-06-13 08:00 | 2014-06-19 17:00 |  | 2014-06-13 08:00 | 2014-06-19 17:00 | 5d |  |  | 20h |
| 113 | 1.2.5.2.2.1.3.1 | Search Sentences Module | manual | 0.5d | 2014-06-13 08:00 | 2014-06-13 12:00 | 100 | 2014-06-13 08:00 | 2014-06-13 12:00 | 0.5d |  | DatPT | 4h |
| 114 | 1.2.5.2.2.1.3.2 | Search Conversation Module | manual | 0.5d | 2014-06-13 13:00 | 2014-06-13 17:00 | 113 | 2014-06-13 13:00 | 2014-06-13 17:00 | 0.5d |  | DatPT | 4h |
| 115 | 1.2.5.2.2.1.3.3 | Search Video Module | manual | 0.5d | 2014-06-16 08:00 | 2014-06-16 12:00 | 114 | 2014-06-16 08:00 | 2014-06-16 12:00 | 0.5d |  | DatPT | 4h |
| 116 | 1.2.5.2.2.1.3.4 | Search Grammar Module | manual | 0.5d | 2014-06-16 13:00 | 2014-06-16 17:00 | 115 | 2014-06-16 13:00 | 2014-06-16 17:00 | 0.5d |  | DatPT | 4h |
| 117 | 1.2.5.2.2.1.3.5 | Search Specialized Japanese Module | manual | 0.5d | 2014-06-17 08:00 | 2014-06-17 12:00 | 116 | 2014-06-17 08:00 | 2014-06-17 12:00 | 0.5d |  | DatPT | 4h |
| 118 | 1.2.5.2.2.1.4 | Login/Logout Module | manual | 0.5d | 2014-06-17 13:00 | 2014-06-17 17:00 | 117 | 2014-06-17 13:00 | 2014-06-17 17:00 | 0.5d |  | DatPT | 4h |
| 119 | 1.2.5.2.2.1.5 | Register Account Module | manual | 0.5d | 2014-06-18 08:00 | 2014-06-18 12:00 | 118 | 2014-06-18 08:00 | 2014-06-18 12:00 | 0.5d |  | DatPT | 4h |
| 120 | 1.2.5.2.2.1.6 | Edit Profile Module | manual | 0.5d | 2014-06-18 13:00 | 2014-06-18 17:00 | 119 | 2014-06-18 13:00 | 2014-06-18 17:00 | 0.5d |  | DatPT | 4h |
| 121 | 1.2.5.2.2.1.7 | Forgot Password Module | manual | 0.5d | 2014-06-19 08:00 | 2014-06-19 12:00 | 120 | 2014-06-19 08:00 | 2014-06-19 12:00 | 0.5d |  | DatPT | 4h |
| 122 | 1.2.5.2.2.2 | **Part 2** |  | 6d | 2014-06-19 08:00 | 2014-06-26 17:00 |  | 2014-06-19 08:00 | 2014-06-26 17:00 | 6d |  |  | 44h |
| 123 | 1.2.5.2.2.2.1 | Change Password Module | manual | 0.5d | 2014-06-19 13:00 | 2014-06-19 17:00 | 121 | 2014-06-19 13:00 | 2014-06-19 17:00 | 0.5d |  | DatPT | 4h |
| 124 | 1.2.5.2.2.2.2 | Forgot Password Module | manual | 0.5d | 2014-06-20 08:00 | 2014-06-20 12:00 | 123 | 2014-06-20 08:00 | 2014-06-20 12:00 | 0.5d |  | DatPT | 4h |
| 125 | 1.2.5.2.2.2.3 | Reading Document Module | manual | 1d | 2014-06-20 13:00 | 2014-06-23 12:00 | 124 | 2014-06-20 13:00 | 2014-06-23 12:00 | 1d |  | DatPT | 8h |
| 126 | 1.2.5.2.2.2.4 | Training Listening Module | manual | 0.5d | 2014-06-23 13:00 | 2014-06-23 17:00 | 125 | 2014-06-23 13:00 | 2014-06-23 17:00 | 0.5d |  | DatPT | 4h |
| 127 | 1.2.5.2.2.2.5 | Listening Conversation Module | manual | 1d | 2014-06-24 08:00 | 2014-06-24 17:00 | 126 | 2014-06-24 08:00 | 2014-06-24 17:00 | 1d |  | DatPT | 8h |
| 128 | 1.2.5.2.2.2.6 | Doing Test Module | manual | 2d | 2014-06-25 08:00 | 2014-06-26 17:00 | 127 | 2014-06-25 08:00 | 2014-06-26 17:00 | 2d |  | DatPT | 16h |
| 129 | 1.2.5.3 | Submit report no.4 First version | milestone, manual | 0d | 2014-06-29 08:00 | 2014-06-29 08:00 | 128 | 2014-06-29 08:00 | 2014-06-29 08:00 |  |  | MinhPT |  |
| 130 | 1.2.5.4 | Review and update comments report #4 | manual | 0.25d | 2014-06-30 08:00 | 2014-06-30 10:00 | 129 | 2014-06-30 08:00 | 2014-06-30 10:00 | 0.25d |  | MinhPT | 2h |
| 131 | 1.2.5.5 | Progress Report 4 | manual | 0.5d | 2014-06-30 10:00 | 2014-06-30 15:00 | 130 | 2014-06-30 10:00 | 2014-06-30 15:00 | 0.5d |  | TuanNN | 4h |
| 132 | 1.2.5.6 | Submit report no.4 final version | milestone, manual | 0d | 2014-06-30 13:00 | 2014-06-30 13:00 | 130 | 2014-06-30 13:00 | 2014-06-30 13:00 |  |  | MinhPT |  |
| 133 | 1.2.6 | **Coding and Unit Test** |  | 8d | 2014-06-20 08:00 | 2014-07-01 17:00 |  | 2014-06-20 08:00 | 2014-07-01 17:00 | 8d |  |  | 64h |
| 134 | 1.2.6.1 | **Part 1** |  | 8d | 2014-06-20 08:00 | 2014-07-01 17:00 |  | 2014-06-20 08:00 | 2014-07-01 17:00 | 8d | 0d |  | 64h |
| 135 | 1.2.6.1.1 | Admin’s account management Module | manual | 1d | 2014-06-20 08:00 | 2014-06-20 17:00 | 101 | 2014-06-20 08:00 | 2014-06-20 17:00 | 1d |  | NamLD | 8h |
| 136 | 1.2.6.1.2 | Management Member’s account Module | manual | 1d | 2014-06-23 08:00 | 2014-06-23 17:00 | 135 | 2014-06-23 08:00 | 2014-06-23 17:00 | 1d |  | NamLD | 8h |
| 137 | 1.2.6.1.3 | Vocabulary Management Module | manual | 0.5d | 2014-06-24 08:00 | 2014-06-24 12:00 | 136 | 2014-06-24 08:00 | 2014-06-24 12:00 | 0.5d |  | NamLD | 4h |
| 138 | 1.2.6.1.4 | Grammar Management Module | manual | 0.5d | 2014-06-24 13:00 | 2014-06-24 17:00 | 137 | 2014-06-24 13:00 | 2014-06-24 17:00 | 0.5d |  | NamLD | 4h |
| 139 | 1.2.6.1.5 | Reading Document Management Module | manual | 1d | 2014-06-25 08:00 | 2014-06-25 17:00 | 138 | 2014-06-25 08:00 | 2014-06-25 17:00 | 1d |  | NamLD | 8h |
| 140 | 1.2.6.1.6 | Conversation management Module | manual | 1d | 2014-06-26 08:00 | 2014-06-26 17:00 | 139 | 2014-06-26 08:00 | 2014-06-26 17:00 | 1d |  | NamLD | 8h |
| 141 | 1.2.6.1.7 | Video Management Module | manual | 0.5d | 2014-06-27 08:00 | 2014-06-27 12:00 | 140 | 2014-06-27 08:00 | 2014-06-27 12:00 | 0.5d |  | NamLD | 4h |
| 142 | 1.2.6.1.8 | Listening Article Management Module | manual | 0.5d | 2014-06-27 13:00 | 2014-06-27 17:00 | 141 | 2014-06-27 13:00 | 2014-06-27 17:00 | 0.5d |  | NamLD | 4h |
| 143 | 1.2.6.1.9 | Doing test management Module | manual | 1d | 2014-06-30 08:00 | 2014-06-30 17:00 | 142 | 2014-06-30 08:00 | 2014-06-30 17:00 | 1d |  | NamLD | 8h |
| 144 | 1.2.6.1.10 | Contact's content management Module | manual | 1d | 2014-07-01 08:00 | 2014-07-01 17:00 | 143 | 2014-07-01 08:00 | 2014-07-01 17:00 | 1d |  | NamLD | 8h |

| ID | WBS | Task | Type | Duration | Start | Finish | Predecessors | Baseline start | Baseline finish | Baseline duration | Total slack | Resources | Work |
| --- | --- | --- | --- | --- | --- | --- | --- | --- | --- | --- | --- | --- | --- |
| 145 | 1.2.7 | **Testing** |  | 12d | 2014-06-16 08:00 | 2014-07-01 17:00 |  | 2014-06-16 08:00 | 2014-07-01 17:00 | 12d |  |  | 128h |
| 146 | 1.2.7.1 | **Create Test Document (Report 5)** |  | 5d | 2014-06-16 13:00 | 2014-06-23 13:00 |  | 2014-06-16 13:00 | 2014-06-23 13:00 | 5d | 0d |  | 40h |
| 147 | 1.2.7.1.1 | Create test plan | manual | 4.5d | 2014-06-16 13:00 | 2014-06-20 17:00 | 71 | 2014-06-16 13:00 | 2014-06-20 17:00 | 4.5d |  | MinhPT | 36h |
| 148 | 1.2.7.1.2 | Review and update Test Plan | manual | 0.5d | 2014-06-23 08:00 | 2014-06-23 12:00 | 147 | 2014-06-23 08:00 | 2014-06-23 12:00 | 0.5d |  | MinhPT | 4h |
| 149 | 1.2.7.1.3 | Submit Final Test Plan | milestone, manual | 0d | 2014-06-23 13:00 | 2014-06-23 13:00 | 148 | 2014-06-23 13:00 | 2014-06-23 13:00 |  |  | MinhPT |  |
| 150 | 1.2.7.2 | **Create Test Case** |  | 6d | 2014-06-23 08:00 | 2014-06-28 17:00 |  | 2014-06-23 08:00 | 2014-06-28 17:00 | 6d |  |  | 88h |
| 151 | 1.2.7.2.1 | Create Unit Test Case | manual | 5.5d | 2014-06-23 13:00 | 2014-06-28 17:00 | 149 | 2014-06-23 13:00 | 2014-06-28 17:00 | 5.5d |  | MinhPT; TuanNN | 88h |
| 152 | 1.3 | **Construction** |  | 29d | 2014-07-02 08:00 | 2014-08-11 17:00 |  | 2014-07-02 08:00 | 2014-08-11 17:00 | 29d |  |  | 716h |
| 153 | 1.3.1 | **Requirements & Design** |  | 2d | 2014-07-02 08:00 | 2014-07-03 17:00 |  | 2014-07-02 08:00 | 2014-07-03 17:00 | 2d |  |  | 32h |
| 154 | 1.3.1.1 | Refine requirement documents | manual | 1d | 2014-07-02 08:00 | 2014-07-02 17:00 | 36 | 2014-07-02 08:00 | 2014-07-02 17:00 | 1d |  | MinhPT; TuanNN; NamLD | 24h |
| 155 | 1.3.1.2 | Refine design documents | manual | 0.5d | 2014-07-03 08:00 | 2014-07-03 12:00 | 154 | 2014-07-03 08:00 | 2014-07-03 12:00 | 0.5d |  | NamLD; DatPT | 8h |
| 156 | 1.3.2 | **Coding & Unit Test** |  | 14d | 2014-07-03 08:00 | 2014-07-22 17:00 |  | 2014-07-03 08:00 | 2014-07-22 17:00 | 14d |  |  | 184h |
| 157 | 1.3.2.1 | **Part 1 (Continue)** |  | 7.5d | 2014-07-03 13:00 | 2014-07-14 17:00 |  | 2014-07-03 13:00 | 2014-07-14 17:00 | 7.5d |  |  | 112h |
| 158 | 1.3.2.1.1 | Homepage Module | manual | 1.5d | 2014-07-03 13:00 | 2014-07-04 17:00 | 155 | 2014-07-03 13:00 | 2014-07-04 17:00 | 1.5d |  | NamLD; DatPT | 24h |
| 159 | 1.3.2.1.2 | **Search Module** |  | 7d | 2014-07-05 08:00 | 2014-07-14 17:00 |  | 2014-07-05 08:00 | 2014-07-14 17:00 | 7d |  |  | 56h |
| 160 | 1.3.2.1.2.1 | Search Sentences Module | manual | 2d | 2014-07-05 08:00 | 2014-07-07 17:00 | 158 | 2014-07-05 08:00 | 2014-07-07 17:00 | 2d |  | DatPT | 16h |
| 161 | 1.3.2.1.2.2 | Search Conversation Module | manual | 1d | 2014-07-08 08:00 | 2014-07-08 17:00 | 160 | 2014-07-08 08:00 | 2014-07-08 17:00 | 1d |  | DatPT | 8h |
| 162 | 1.3.2.1.2.3 | Search Video Module | manual | 1d | 2014-07-10 08:00 | 2014-07-10 17:00 | 161 | 2014-07-10 08:00 | 2014-07-10 17:00 | 1d |  | DatPT | 8h |
| 163 | 1.3.2.1.2.4 | Search Grammar Module | manual | 1d | 2014-07-11 08:00 | 2014-07-11 17:00 | 162 | 2014-07-11 08:00 | 2014-07-11 17:00 | 1d |  | DatPT | 8h |
| 164 | 1.3.2.1.2.5 | Search Specialized Japanese Module | manual | 1d | 2014-07-14 08:00 | 2014-07-14 17:00 | 163 | 2014-07-14 08:00 | 2014-07-14 17:00 | 1d |  | DatPT; NamLD | 16h |
| 165 | 1.3.2.1.3 | Login/Logout Module | manual | 1d | 2014-07-07 08:00 | 2014-07-07 17:00 | 158 | 2014-07-07 08:00 | 2014-07-07 17:00 | 1d |  | NamLD | 8h |
| 166 | 1.3.2.1.4 | Register Account Module | manual | 1d | 2014-07-08 08:00 | 2014-07-08 17:00 | 165 | 2014-07-08 08:00 | 2014-07-08 17:00 | 1d |  | NamLD | 8h |
| 167 | 1.3.2.1.5 | Edit Profile Module | manual | 1d | 2014-07-09 08:00 | 2014-07-09 17:00 | 166 | 2014-07-09 08:00 | 2014-07-09 17:00 | 1d |  | NamLD | 8h |
| 168 | 1.3.2.1.6 | Forgot Password Module | manual | 1d | 2014-07-10 08:00 | 2014-07-10 17:00 | 167 | 2014-07-10 08:00 | 2014-07-10 17:00 | 1d |  | NamLD | 8h |

| ID | WBS | Task | Type | Duration | Start | Finish | Predecessors | Baseline start | Baseline finish | Baseline duration | Resources | Work |
| --- | --- | --- | --- | --- | --- | --- | --- | --- | --- | --- | --- | --- |
| 169 | 1.3.2.2 | **Part 2** |  | 6d | 2014-07-15 08:00 | 2014-07-22 17:00 |  | 2014-07-15 08:00 | 2014-07-22 17:00 | 6d |  | 72h |
| 170 | 1.3.2.2.1 | Change Password Module | manual | 1d | 2014-07-15 08:00 | 2014-07-15 17:00 | 164 | 2014-07-15 08:00 | 2014-07-15 17:00 | 1d | DatPT | 8h |
| 171 | 1.3.2.2.2 | Forgot Password Module | manual | 1d | 2014-07-16 08:00 | 2014-07-16 17:00 | 170 | 2014-07-16 08:00 | 2014-07-16 17:00 | 1d | DatPT | 8h |
| 172 | 1.3.2.2.3 | Training Reading Document Module | manual | 1.5d | 2014-07-17 08:00 | 2014-07-18 12:00 | 171 | 2014-07-17 08:00 | 2014-07-18 12:00 | 1.5d | DatPT | 12h |
| 173 | 1.3.2.2.4 | Training Listening Module | manual | 0.5d | 2014-07-18 13:00 | 2014-07-18 17:00 | 172 | 2014-07-18 13:00 | 2014-07-18 17:00 | 0.5d | DatPT | 4h |
| 174 | 1.3.2.2.5 | Listening Conversation Module | manual | 1d | 2014-07-18 08:00 | 2014-07-18 17:00 | 193 | 2014-07-18 08:00 | 2014-07-18 17:00 | 1d | NamLD; DatPT | 16h |
| 175 | 1.3.2.2.6 | Doing Test Module | manual | 1.5d | 2014-07-21 08:00 | 2014-07-22 12:00 | 174 | 2014-07-21 08:00 | 2014-07-22 12:00 | 1.5d | NamLD; DatPT | 24h |
| 176 | 1.3.2.3 | Complete Coding | milestone, manual | 0d | 2014-07-22 13:00 | 2014-07-22 13:00 | 175 | 2014-07-22 13:00 | 2014-07-22 13:00 |  | NamLD |  |
| 177 | 1.3.3 | **Testing** |  | 20d | 2014-07-02 08:00 | 2014-07-29 17:00 |  | 2014-07-02 08:00 | 2014-07-29 17:00 | 20d |  | 196h |
| 178 | 1.3.3.1 | **Create test documents (Continue)** |  | 7d | 2014-07-02 08:00 | 2014-07-10 17:00 |  | 2014-07-02 08:00 | 2014-07-10 17:00 | 7d |  | 80h |
| 179 | 1.3.3.1.1 | **Create test cases** |  | 4d | 2014-07-02 08:00 | 2014-07-07 17:00 |  | 2014-07-02 08:00 | 2014-07-07 17:00 | 4d |  | 48h |
| 180 | 1.3.3.1.1.1 | Create Integration Test Case | manual | 2d | 2014-07-03 08:00 | 2014-07-04 17:00 | 154 | 2014-07-03 08:00 | 2014-07-04 17:00 | 2d | MinhPT; TuanNN | 32h |
| 181 | 1.3.3.1.1.2 | Create System Test Case | manual | 1d | 2014-07-07 08:00 | 2014-07-07 17:00 | 180 | 2014-07-07 08:00 | 2014-07-07 17:00 | 1d | MinhPT; TuanNN | 16h |
| 182 | 1.3.3.1.2 | Create test checklist | manual | 1d | 2014-07-08 08:00 | 2014-07-08 17:00 | 181 | 2014-07-08 08:00 | 2014-07-08 17:00 | 1d | TuanNN; MinhPT | 16h |
| 183 | 1.3.3.1.3 | Review test documents | manual | 0.5d | 2014-07-09 08:00 | 2014-07-09 12:00 | 182 | 2014-07-09 08:00 | 2014-07-09 12:00 | 0.5d | MinhPT | 4h |
| 184 | 1.3.3.1.4 | Submit report no.5 First version | milestone, manual | 0d | 2014-07-09 13:00 | 2014-07-09 13:00 | 183 | 2014-07-09 13:00 | 2014-07-09 13:00 |  | MinhPT |  |
| 185 | 1.3.3.1.5 | Review report no.5 | manual | 0.5d | 2014-07-09 13:00 | 2014-07-09 17:00 | 184 | 2014-07-09 13:00 | 2014-07-09 17:00 | 0.5d | MinhPT; NamLD | 8h |
| 186 | 1.3.3.1.6 | Progress Report 5 | manual | 0.5d | 2014-07-09 13:00 | 2014-07-09 17:00 | 184 | 2014-07-09 13:00 | 2014-07-09 17:00 | 0.5d | TuanNN | 4h |
| 187 | 1.3.3.1.7 | Submit report no.5 final version | milestone, manual | 0d | 2014-07-10 08:00 | 2014-07-10 08:00 | 185 | 2014-07-10 08:00 | 2014-07-10 08:00 |  | MinhPT |  |
| 188 | 1.3.3.2 | **Execute test** |  | 11d | 2014-07-15 08:00 | 2014-07-29 17:00 |  | 2014-07-15 08:00 | 2014-07-29 17:00 | 11d |  | 116h |
| 189 | 1.3.3.2.1 | **Execute Test Part 1** |  | 3d | 2014-07-15 08:00 | 2014-07-17 17:00 |  | 2014-07-15 08:00 | 2014-07-17 17:00 | 3d |  | 36h |
| 190 | 1.3.3.2.1.1 | Execute Integration Test | manual | 1d | 2014-07-15 08:00 | 2014-07-15 17:00 | 157 | 2014-07-15 08:00 | 2014-07-15 17:00 | 1d | MinhPT; TuanNN | 16h |
| 191 | 1.3.3.2.1.2 | Fix bug Integration Test | manual | 1d | 2014-07-16 08:00 | 2014-07-16 17:00 | 190 | 2014-07-16 08:00 | 2014-07-16 17:00 | 1d | NamLD | 8h |
| 192 | 1.3.3.2.1.3 | Execute System Test | manual | 0.5d | 2014-07-17 08:00 | 2014-07-17 12:00 | 191 | 2014-07-17 08:00 | 2014-07-17 12:00 | 0.5d | MinhPT; TuanNN | 8h |
| 193 | 1.3.3.2.1.4 | Fix bug System Test | manual | 0.5d | 2014-07-17 13:00 | 2014-07-17 17:00 | 192 | 2014-07-17 13:00 | 2014-07-17 17:00 | 0.5d | NamLD | 4h |

| ID | WBS | Task | Type | Duration | Start | Finish | Predecessors | Baseline start | Baseline finish | Baseline duration | Resources | Work |
| --- | --- | --- | --- | --- | --- | --- | --- | --- | --- | --- | --- | --- |
| 194 | 1.3.3.2.2 | **Execute Test Part 2** |  | 5d | 2014-07-23 08:00 | 2014-07-29 17:00 |  | 2014-07-23 08:00 | 2014-07-29 17:00 | 5d |  | 80h |
| 195 | 1.3.3.2.2.1 | Execute Integration Test | manual | 1d | 2014-07-22 13:00 | 2014-07-23 12:00 | 176 | 2014-07-22 13:00 | 2014-07-23 12:00 | 1d | MinhPT; TuanNN | 16h |
| 196 | 1.3.3.2.2.2 | Fix bug Integration Test | manual | 1d | 2014-07-23 13:00 | 2014-07-24 12:00 | 195 | 2014-07-23 13:00 | 2014-07-24 12:00 | 1d | DatPT; NamLD | 16h |
| 197 | 1.3.3.2.2.3 | Execute System Test | manual | 1d | 2014-07-24 13:00 | 2014-07-25 12:00 | 196 | 2014-07-24 13:00 | 2014-07-25 12:00 | 1d | MinhPT; TuanNN | 16h |
| 198 | 1.3.3.2.2.4 | Fix bug System Test | manual | 2d | 2014-07-25 13:00 | 2014-07-29 12:00 | 197 | 2014-07-25 13:00 | 2014-07-29 12:00 | 2d | NamLD; DatPT | 32h |
| 199 | 1.3.3.2.3 | Complete Testing | milestone, manual | 0d | 2014-07-29 13:00 | 2014-07-29 13:00 | 198 | 2014-07-29 13:00 | 2014-07-29 13:00 |  | Project Team |  |
| 200 | 1.3.4 | Create report no.6 -Software User's Manual | manual | 2d | 2014-07-29 13:00 | 2014-07-31 12:00 | 197, 199 | 2014-07-29 13:00 | 2014-07-31 12:00 | 2d | NamLD; DatPT; MinhPT; TuanNN | 64h |
| 201 | 1.3.5 | Submit report no.6 First version | milestone, manual | 0d | 2014-07-31 13:00 | 2014-07-31 13:00 | 200 | 2014-07-31 13:00 | 2014-07-31 13:00 |  | NamLD |  |
| 202 | 1.3.6 | Review & update report no.6 | manual | 1d | 2014-07-31 13:00 | 2014-08-01 12:00 | 201 | 2014-07-31 13:00 | 2014-08-01 12:00 | 1d | NamLD; DatPT; MinhPT; TuanNN | 32h |
| 203 | 1.3.7 | Progress Report 6 | manual | 1d | 2014-08-01 13:00 | 2014-08-04 12:00 | 202 | 2014-08-01 13:00 | 2014-08-04 12:00 | 1d | TuanNN; NamLD; DatPT; MinhPT | 32h |
| 204 | 1.3.8 | Submit report no.6 final version | milestone, manual | 0d | 2014-08-04 13:00 | 2014-08-04 13:00 | 202, 203 | 2014-08-04 13:00 | 2014-08-04 13:00 |  | NamLD |  |
| 205 | 1.3.9 | Prepare Final Report and Source Code | manual | 5d | 2014-08-04 13:00 | 2014-08-11 12:00 | 204 | 2014-08-04 13:00 | 2014-08-11 12:00 | 5d | DatPT; MinhPT; NamLD; TuanNN | 160h |
| 206 | 1.3.10 | Submit Final document and CD Source Code | manual | 0.5d | 2014-08-11 13:00 | 2014-08-11 17:00 | 204, 205 | 2014-08-11 13:00 | 2014-08-11 17:00 | 0.5d | NamLD; DatPT; MinhPT; TuanNN | 16h |
| 207 | 1.4 | **Termination** |  | 9d | 2014-08-12 08:00 | 2014-08-22 17:00 |  | 2014-08-12 08:00 | 2014-08-22 17:00 | 9d |  | 272h |
| 208 | 1.4.1 | **Preclosing** |  | 5d | 2014-08-12 08:00 | 2014-08-18 17:00 |  | 2014-08-12 08:00 | 2014-08-18 17:00 | 5d |  | 160h |
| 209 | 1.4.1.1 | Conduct project review-lessons learned | manual | 2d | 2014-08-12 08:00 | 2014-08-13 17:00 | 206 | 2014-08-12 08:00 | 2014-08-13 17:00 | 2d | DatPT; MinhPT; NamLD; TuanNN | 64h |
| 210 | 1.4.1.2 | Complete program and documents | manual | 3d | 2014-08-14 08:00 | 2014-08-18 17:00 | 209 | 2014-08-14 08:00 | 2014-08-18 17:00 | 3d | DatPT; MinhPT; NamLD; TuanNN | 96h |
| 211 | 1.4.2 | **Closing** |  | 5d | 2014-08-18 08:00 | 2014-08-22 17:00 |  | 2014-08-18 08:00 | 2014-08-22 17:00 | 5d |  | 112h |
| 212 | 1.4.2.1 | Prepare for presentation | manual | 1.5d | 2014-08-19 08:00 | 2014-08-20 12:00 | 210 | 2014-08-19 08:00 | 2014-08-20 12:00 | 1.5d | DatPT; MinhPT; NamLD; TuanNN | 48h |
| 213 | 1.4.2.2 | Represent capstone project | manual | 2d | 2014-08-20 13:00 | 2014-08-22 12:00 | 212 | 2014-08-20 13:00 | 2014-08-22 12:00 | 2d | DatPT; MinhPT; NamLD; TuanNN | 64h |
| 214 | 1.4.2.3 | Project completed | milestone, manual | 0d | 2014-08-22 13:00 | 2014-08-22 13:00 | 213 | 2014-08-22 13:00 | 2014-08-22 13:00 |  | Project Team |  |
