# UJD_VN_Project_Schedule

Schedule from MS Project, 2014-05-12 to 2014-08-27.

## Calendars

- Standard: Mon-Fri 08:00-12:00, 13:00-17:00; Sat-Sun off.

## Resources

| Resource |
| --- |
| Project Team |
| NamLD |
| MinhPT |
| DatPT |
| TuanNN |

## Schedule

| ID | WBS | Task | Type | Duration | Start | Finish | Predecessors | Total slack | Resources | Work |
| --- | --- | --- | --- | --- | --- | --- | --- | --- | --- | --- |
| 1 | 1 | **UJD_VN** |  | 78d | 2014-05-12 08:00 | 2014-08-27 17:00 |  |  |  | 1656h |
| 2 | 1.1 | **Initiation** |  | 15d | 2014-05-12 08:00 | 2014-05-30 17:00 |  | 0d |  | 404h |
| 3 | 1.1.1 | Develop project Idea | manual | 1d | 2014-05-12 08:00 | 2014-05-12 17:00 |  |  | Project Team | 8h |
| 4 | 1.1.2 | Prepare project | manual | 0.5d | 2014-05-13 08:00 | 2014-05-13 12:00 | 3 |  | Project Team | 4h |
| 5 | 1.1.3 | Q & A Management | manual | 0.5d | 2014-05-13 13:00 | 2014-05-13 17:00 | 4 |  | TuanNN | 4h |
| 6 | 1.1.4 | **Develop report no.1: Introduction** |  | 6d | 2014-05-13 08:00 | 2014-05-20 17:00 |  |  |  | 64h |
| 7 | 1.1.4.1 | System feasible study | manual | 1d | 2014-05-13 08:00 | 2014-05-13 17:00 | 3 |  | Project Team | 8h |
| 8 | 1.1.4.2 | Define business situation | manual | 1d | 2014-05-13 08:00 | 2014-05-13 17:00 | 3 |  | Project Team | 8h |
| 9 | 1.1.4.3 | Define project and system scope | manual | 1d | 2014-05-14 08:00 | 2014-05-14 17:00 | 7, 8 |  | Project Team | 8h |
| 10 | 1.1.4.4 | Review & update report no.1 : Draft vesion | manual | 0.5d | 2014-05-15 08:00 | 2014-05-15 12:00 | 9 |  | MinhPT; TuanNN | 8h |
| 11 | 1.1.4.5 | Submit report no.1 first version | manual | 0.5d | 2014-05-15 13:00 | 2014-05-15 17:00 | 10 |  | MinhPT; TuanNN | 8h |
| 12 | 1.1.4.6 | Revise after got comments for report no.1 | manual | 1d | 2014-05-16 08:00 | 2014-05-16 17:00 | 11 |  | MinhPT; TuanNN | 16h |
| 13 | 1.1.4.7 | Kick-off meeting | milestone, manual | 0d | 2014-05-19 08:00 | 2014-05-19 08:00 | 12 |  | Project Team |  |
| 14 | 1.1.4.8 | Progress Report 1 | manual | 1d | 2014-05-19 08:00 | 2014-05-19 17:00 | 12 |  | TuanNN | 8h |
| 15 | 1.1.4.9 | Submit report no.1 final version | milestone, manual | 0d | 2014-05-20 08:00 | 2014-05-20 08:00 | 13 |  | MinhPT |  |
| 16 | 1.1.5 | **Technologies** |  | 9d | 2014-05-15 08:00 | 2014-05-27 17:00 |  |  |  | 136h |
| 17 | 1.1.5.1 | Research development technology | manual | 2d | 2014-05-15 08:00 | 2014-05-16 17:00 | 9 |  | DatPT; NamLD | 32h |
| 18 | 1.1.5.2 | Install and configuration PHP with Xampp | manual | 0.5d | 2014-05-19 08:00 | 2014-05-19 12:00 | 17 |  | NamLD; DatPT | 8h |
| 19 | 1.1.5.3 | Study Xampp and MYSQL | manual | 6d | 2014-05-19 13:00 | 2014-05-27 12:00 | 18 |  | DatPT; NamLD | 96h |
| 20 | 1.1.6 | **Requirements** |  | 9d | 2014-05-20 08:00 | 2014-05-30 17:00 |  |  |  | 128h |
| 21 | 1.1.6.1 | Collect business requirements and processes | manual | 1d | 2014-05-20 08:00 | 2014-05-20 17:00 | 15 |  | MinhPT; TuanNN | 16h |
| 22 | 1.1.6.2 | Create draft screen prototypes | manual | 6d | 2014-05-21 08:00 | 2014-05-28 17:00 | 21 |  | DatPT; TuanNN | 96h |
| 23 | 1.1.6.3 | Review and edit screen prototypes | manual | 1d | 2014-05-29 08:00 | 2014-05-29 17:00 | 22 |  | DatPT; TuanNN | 16h |
| 24 | 1.1.6.4 | Complete screen prototype | milestone, manual | 0d | 2014-05-30 08:00 | 2014-05-30 08:00 | 23 |  | DatPT; TuanNN |  |

| ID | WBS | Task | Type | Duration | Start | Finish | Predecessors | Resources | Work |
| --- | --- | --- | --- | --- | --- | --- | --- | --- | --- |
| 25 | 1.1.7 | **Develop Project Plan** |  | 9d | 2014-05-20 08:00 | 2014-05-30 17:00 |  |  | 60h |
| 26 | 1.1.7.1 | Develop project definition | manual | 1d | 2014-05-20 10:00 | 2014-05-21 10:00 | 13 | NamLD | 8h |
| 27 | 1.1.7.2 | Work BreakDown Structure | manual | 0.5d | 2014-05-22 08:00 | 2014-05-22 12:00 | 26 | NamLD | 4h |
| 28 | 1.1.7.3 | Create project schedule | manual | 1d | 2014-05-23 08:00 | 2014-05-23 17:00 | 27 | NamLD | 8h |
| 29 | 1.1.7.4 | **Develop report no.2: Project management Plan** |  | 6d | 2014-05-24 08:00 | 2014-05-30 17:00 |  |  | 40h |
| 30 | 1.1.7.4.1 | Create Project plan first version | manual | 2d | 2014-05-24 08:00 | 2014-05-26 17:00 | 28 | NamLD | 16h |
| 31 | 1.1.7.4.2 | Submit report no.2 first version | milestone, manual | 0d | 2014-05-27 08:00 | 2014-05-27 08:00 | 30 | NamLD |  |
| 32 | 1.1.7.4.3 | Revise after got comments for report no.2 | manual | 1d | 2014-05-28 08:00 | 2014-05-28 17:00 | 31 | NamLD; MinhPT | 16h |
| 33 | 1.1.7.4.4 | Progress Report 2 | manual | 1d | 2014-05-29 08:00 | 2014-05-29 17:00 | 32 | TuanNN | 8h |
| 34 | 1.1.7.4.5 | Submit report no.2 final version | milestone, manual | 0d | 2014-05-30 08:00 | 2014-05-30 08:00 | 32 | NamLD |  |
| 35 | 1.2 | **Solution** |  | 22d | 2014-06-02 08:00 | 2014-07-01 17:00 |  |  | 712h |
| 36 | 1.2.1 | **Project Management** |  | 3d | 2014-06-02 08:00 | 2014-06-04 17:00 |  |  | 16h |
| 37 | 1.2.1.1 | Refine project plan | manual | 2d | 2014-06-02 08:00 | 2014-06-03 17:00 | 34 | NamLD | 16h |
| 38 | 1.2.2 | **Technologies** |  | 7d | 2014-06-02 08:00 | 2014-06-10 17:00 |  |  | 112h |
| 39 | 1.2.2.1 | Design database models | manual | 1d | 2014-06-02 08:00 | 2014-06-02 17:00 | 34 | DatPT; NamLD | 16h |
| 40 | 1.2.2.2 | Coding prototypes | manual | 6d | 2014-06-03 08:00 | 2014-06-10 17:00 | 39 | DatPT; NamLD | 96h |
| 41 | 1.2.3 | **User Requirements Specification** |  | 5d | 2014-06-02 08:00 | 2014-06-06 17:00 |  |  | 80h |
| 42 | 1.2.3.1 | Create draft requirements | manual | 2d | 2014-06-02 08:00 | 2014-06-03 17:00 | 34 | MinhPT; TuanNN | 32h |
| 43 | 1.2.3.2 | Complete draft requirements | milestone, manual | 0d | 2014-06-04 08:00 | 2014-06-04 08:00 | 42 | MinhPT; TuanNN |  |
| 44 | 1.2.3.3 | Develop Use-case model | manual | 1d | 2014-06-04 08:00 | 2014-06-04 17:00 | 43 | MinhPT; TuanNN | 16h |
| 45 | 1.2.3.4 | Develop main functions and processes | manual | 2d | 2014-06-05 08:00 | 2014-06-06 17:00 | 44 | DatPT; NamLD | 32h |
| 46 | 1.2.4 | **Software Requirements Specification** |  | 10d | 2014-06-09 08:00 | 2014-06-20 17:00 |  |  | 130h |
| 47 | 1.2.4.1 | **Functional Requirement Specification** |  | 10d | 2014-06-09 08:00 | 2014-06-20 17:00 |  |  | 110h |
| 48 | 1.2.4.1.1 | **Part 1** |  | 6d | 2014-06-09 08:00 | 2014-06-16 17:00 |  |  | 84h |
| 49 | 1.2.4.1.1.1 | Homepage Module | manual | 1d | 2014-06-09 08:00 | 2014-06-09 17:00 | 41 | TuanNN | 8h |

| ID | WBS | Task | Type | Duration | Start | Finish | Predecessors | Resources | Work |
| --- | --- | --- | --- | --- | --- | --- | --- | --- | --- |
| 50 | 1.2.4.1.1.2 | **Admin Module** |  | 5d | 2014-06-10 08:00 | 2014-06-16 17:00 |  |  | 40h |
| 51 | 1.2.4.1.1.2.1 | Admin’s account management Module | manual | 0.5d | 2014-06-10 08:00 | 2014-06-10 12:00 | 49 | TuanNN | 4h |
| 52 | 1.2.4.1.1.2.2 | Management Member’s account Module | manual | 0.5d | 2014-06-10 13:00 | 2014-06-10 17:00 | 51 | TuanNN | 4h |
| 53 | 1.2.4.1.1.2.3 | Vocabulary Management Module | manual | 0.5d | 2014-06-11 08:00 | 2014-06-11 12:00 | 52 | TuanNN | 4h |
| 54 | 1.2.4.1.1.2.4 | Grammar Management Module | manual | 0.5d | 2014-06-11 13:00 | 2014-06-11 17:00 | 53 | TuanNN | 4h |
| 55 | 1.2.4.1.1.2.5 | Reading Document Management Module | manual | 0.5d | 2014-06-12 08:00 | 2014-06-12 12:00 | 54 | TuanNN | 4h |
| 56 | 1.2.4.1.1.2.6 | Conversation management Module | manual | 0.5d | 2014-06-12 13:00 | 2014-06-12 17:00 | 55 | TuanNN | 4h |
| 57 | 1.2.4.1.1.2.7 | Video Management Module | manual | 0.5d | 2014-06-13 08:00 | 2014-06-13 12:00 | 56 | TuanNN | 4h |
| 58 | 1.2.4.1.1.2.8 | Listening Article Management Module | manual | 0.5d | 2014-06-13 13:00 | 2014-06-13 17:00 | 57 | TuanNN | 4h |
| 59 | 1.2.4.1.1.2.9 | Doing test management Module | manual | 0.5d | 2014-06-16 08:00 | 2014-06-16 12:00 | 58 | TuanNN | 4h |
| 60 | 1.2.4.1.1.2.10 | Contact's content management Module | manual | 0.5d | 2014-06-16 13:00 | 2014-06-16 17:00 | 59 | TuanNN | 4h |
| 61 | 1.2.4.1.1.3 | **Search Module** |  | 3d | 2014-06-10 08:00 | 2014-06-12 17:00 |  |  | 20h |
| 62 | 1.2.4.1.1.3.1 | Search Sentences Module | manual | 0.5d | 2014-06-10 08:00 | 2014-06-10 12:00 | 49 | MinhPT | 4h |
| 63 | 1.2.4.1.1.3.2 | Search Conversation Module | manual | 0.5d | 2014-06-10 13:00 | 2014-06-10 17:00 | 62 | MinhPT | 4h |
| 64 | 1.2.4.1.1.3.3 | Search Video Module | manual | 0.5d | 2014-06-11 08:00 | 2014-06-11 12:00 | 63 | MinhPT | 4h |
| 65 | 1.2.4.1.1.3.4 | Search Grammar Module | manual | 0.5d | 2014-06-11 13:00 | 2014-06-11 17:00 | 64 | MinhPT | 4h |
| 66 | 1.2.4.1.1.3.5 | Search Specialized Japanese Module | manual | 0.5d | 2014-06-12 08:00 | 2014-06-12 12:00 | 65 | MinhPT | 4h |
| 67 | 1.2.4.1.1.4 | Login/Logout Module | manual | 0.5d | 2014-06-12 13:00 | 2014-06-12 17:00 | 66 | MinhPT | 4h |
| 68 | 1.2.4.1.1.5 | Register Account Module | manual | 0.5d | 2014-06-13 08:00 | 2014-06-13 12:00 | 67 | MinhPT | 4h |
| 69 | 1.2.4.1.1.6 | Edit Profile Module | manual | 0.5d | 2014-06-13 13:00 | 2014-06-13 17:00 | 68 | MinhPT | 4h |
| 70 | 1.2.4.1.1.7 | Forgot Password Module | manual | 0.5d | 2014-06-16 08:00 | 2014-06-16 12:00 | 69 | MinhPT | 4h |
| 71 | 1.2.4.1.2 | **Part 2** |  | 5d | 2014-06-16 08:00 | 2014-06-20 17:00 |  |  | 26h |
| 72 | 1.2.4.1.2.1 | Contact Admin Module | manual | 1.5d | 2014-06-17 08:00 | 2014-06-18 12:00 | 60 | TuanNN | 12h |
| 73 | 1.2.4.1.2.2 | Doing Test Module | manual | 0.5d | 2014-06-18 13:00 | 2014-06-18 17:00 | 72 | TuanNN | 4h |
| 74 | 1.2.4.1.2.3 | Reading Document Module | manual | 0.5d | 2014-06-19 08:00 | 2014-06-19 12:00 | 73 | TuanNN | 4h |
| 75 | 1.2.4.1.2.4 | Training Listening Module | manual | 0.5d | 2014-06-19 13:00 | 2014-06-19 17:00 | 74 | TuanNN | 4h |
| 76 | 1.2.4.1.2.5 | Listening Conversation Module | manual | 0.25d | 2014-06-20 08:00 | 2014-06-20 10:00 | 75 | TuanNN | 2h |

| ID | WBS | Task | Type | Duration | Start | Finish | Predecessors | Total slack | Resources | Work |
| --- | --- | --- | --- | --- | --- | --- | --- | --- | --- | --- |
| 77 | 1.2.4.2 | **Non-functional Requirements Specification** |  | 1d | 2014-06-09 08:00 | 2014-06-09 17:00 |  |  |  | 16h |
| 78 | 1.2.4.2.1 | Develop User Interface requirements | manual | 1d | 2014-06-09 08:00 | 2014-06-09 17:00 | 45 |  | DatPT | 8h |
| 79 | 1.2.4.2.2 | Develop Performance requirements | manual | 1d | 2014-06-09 08:00 | 2014-06-09 17:00 | 44 |  | MinhPT | 8h |
| 80 | 1.2.4.3 | Submit report no.3 First version | milestone, manual | 0d | 2014-06-20 10:00 | 2014-06-20 10:00 | 76 |  | TuanNN |  |
| 81 | 1.2.4.4 | Revise after got comments of Report no.3 | manual | 0.25d | 2014-06-20 10:00 | 2014-06-20 12:00 | 80 |  | TuanNN | 2h |
| 82 | 1.2.4.5 | Progress Report 3 | manual | 0.25d | 2014-06-20 13:00 | 2014-06-20 15:00 | 81 |  | TuanNN | 2h |
| 83 | 1.2.4.6 | Submit report no.3 final version | milestone, manual | 0d | 2014-06-20 15:00 | 2014-06-20 15:00 | 82 |  | TuanNN |  |
| 84 | 1.2.5 | **Design** |  | 17d | 2014-06-09 08:00 | 2014-07-01 17:00 |  |  |  | 182h |
| 85 | 1.2.5.1 | **System Architectural Design** |  | 4d | 2014-06-09 08:00 | 2014-06-12 17:00 | 41 |  |  | 32h |
| 86 | 1.2.5.1.1 | Define the system structure and collect system features | manual | 1d | 2014-06-09 08:00 | 2014-06-09 17:00 | 45 |  | NamLD | 8h |
| 87 | 1.2.5.1.2 | Study the common System Architeture | manual | 1d | 2014-06-10 08:00 | 2014-06-10 17:00 | 86 |  | NamLD | 8h |
| 88 | 1.2.5.1.3 | Choice of System Architeture | manual | 1d | 2014-06-11 08:00 | 2014-06-11 17:00 | 87 |  | NamLD | 8h |
| 89 | 1.2.5.1.4 | Discussion of Alternative Design | manual | 1d | 2014-06-12 08:00 | 2014-06-12 17:00 | 88 |  | NamLD | 8h |
| 90 | 1.2.5.2 | **Detailed Design** |  | 16d | 2014-06-10 08:00 | 2014-07-01 17:00 |  |  |  | 144h |
| 91 | 1.2.5.2.1 | **Component Diagram** |  | 2d | 2014-06-10 08:00 | 2014-06-11 17:00 |  |  |  | 16h |
| 92 | 1.2.5.2.1.1 | Define the component | manual | 0.5d | 2014-06-10 08:00 | 2014-06-10 12:00 | 78 |  | DatPT | 4h |
| 93 | 1.2.5.2.1.2 | General component diagram | manual | 0.5d | 2014-06-10 13:00 | 2014-06-10 17:00 | 92 |  | DatPT | 4h |
| 94 | 1.2.5.2.1.3 | Detail component diagram | manual | 0.5d | 2014-06-11 08:00 | 2014-06-11 12:00 | 93 |  | DatPT | 4h |
| 95 | 1.2.5.2.1.4 | Detail Database Design | manual | 0.5d | 2014-06-11 13:00 | 2014-06-11 17:00 | 94 |  | DatPT | 4h |
| 96 | 1.2.5.2.2 | **User Interface Design** |  | 11d | 2014-06-12 08:00 | 2014-06-26 17:00 |  | 0d |  | 128h |
| 97 | 1.2.5.2.2.1 | **Part 1** |  | 6d | 2014-06-12 08:00 | 2014-06-19 17:00 |  |  |  | 84h |
| 98 | 1.2.5.2.2.1.1 | Homepage Module | manual | 1d | 2014-06-12 08:00 | 2014-06-12 17:00 | 95 |  | DatPT | 8h |
| 99 | 1.2.5.2.2.1.2 | **Admin Module** |  | 5d | 2014-06-13 08:00 | 2014-06-19 17:00 |  |  |  | 40h |
| 100 | 1.2.5.2.2.1.2.1 | Admin’s account management Module | manual | 0.5d | 2014-06-13 08:00 | 2014-06-13 12:00 | 89 |  | NamLD | 4h |
| 101 | 1.2.5.2.2.1.2.2 | Management Member’s account Module | manual | 0.5d | 2014-06-13 13:00 | 2014-06-13 17:00 | 100 |  | NamLD | 4h |
| 102 | 1.2.5.2.2.1.2.3 | Vocabulary Management Module | manual | 0.5d | 2014-06-16 08:00 | 2014-06-16 12:00 | 101 |  | NamLD | 4h |
| 103 | 1.2.5.2.2.1.2.4 | Grammar Management Module | manual | 0.5d | 2014-06-16 13:00 | 2014-06-16 17:00 | 102 |  | NamLD | 4h |
| 104 | 1.2.5.2.2.1.2.5 | Reading Document Management Module | manual | 0.5d | 2014-06-17 08:00 | 2014-06-17 12:00 | 103 |  | NamLD | 4h |
| 105 | 1.2.5.2.2.1.2.6 | Conversation management Module | manual | 0.5d | 2014-06-17 13:00 | 2014-06-17 17:00 | 104 |  | NamLD | 4h |
| 106 | 1.2.5.2.2.1.2.7 | Video Management Module | manual | 0.5d | 2014-06-18 08:00 | 2014-06-18 12:00 | 105 |  | NamLD | 4h |
| 107 | 1.2.5.2.2.1.2.8 | Listening Article Management Module | manual | 0.5d | 2014-06-18 13:00 | 2014-06-18 17:00 | 106 |  | NamLD | 4h |
| 108 | 1.2.5.2.2.1.2.9 | Doing test management Module | manual | 0.5d | 2014-06-19 08:00 | 2014-06-19 12:00 | 107 |  | NamLD | 4h |
| 109 | 1.2.5.2.2.1.2.10 | Contact's content management Module | manual | 0.5d | 2014-06-19 13:00 | 2014-06-19 17:00 | 108 |  | NamLD | 4h |

| ID | WBS | Task | Type | Duration | Start | Finish | Predecessors | Total slack | Resources | Work |
| --- | --- | --- | --- | --- | --- | --- | --- | --- | --- | --- |
| 110 | 1.2.5.2.2.1.3 | **Search Module** |  | 5d | 2014-06-13 08:00 | 2014-06-19 17:00 |  |  |  | 20h |
| 111 | 1.2.5.2.2.1.3.1 | Search Sentences Module | manual | 0.5d | 2014-06-13 08:00 | 2014-06-13 12:00 | 98 |  | DatPT | 4h |
| 112 | 1.2.5.2.2.1.3.2 | Search Conversation Module | manual | 0.5d | 2014-06-13 13:00 | 2014-06-13 17:00 | 111 |  | DatPT | 4h |
| 113 | 1.2.5.2.2.1.3.3 | Search Video Module | manual | 0.5d | 2014-06-16 08:00 | 2014-06-16 12:00 | 112 |  | DatPT | 4h |
| 114 | 1.2.5.2.2.1.3.4 | Search Grammar Module | manual | 0.5d | 2014-06-16 13:00 | 2014-06-16 17:00 | 113 |  | DatPT | 4h |
| 115 | 1.2.5.2.2.1.3.5 | Search Specialized Japanese Module | manual | 0.5d | 2014-06-17 08:00 | 2014-06-17 12:00 | 114 |  | DatPT | 4h |
| 116 | 1.2.5.2.2.1.4 | Login/Logout Module | manual | 0.5d | 2014-06-17 13:00 | 2014-06-17 17:00 | 115 |  | DatPT | 4h |
| 117 | 1.2.5.2.2.1.5 | Register Account Module | manual | 0.5d | 2014-06-18 08:00 | 2014-06-18 12:00 | 116 |  | DatPT | 4h |
| 118 | 1.2.5.2.2.1.6 | Edit Profile Module | manual | 0.5d | 2014-06-18 13:00 | 2014-06-18 17:00 | 117 |  | DatPT | 4h |
| 119 | 1.2.5.2.2.1.7 | Forgot Password Module | manual | 0.5d | 2014-06-19 08:00 | 2014-06-19 12:00 | 118 |  | DatPT | 4h |
| 120 | 1.2.5.2.2.2 | **Part 2** |  | 6d | 2014-06-19 08:00 | 2014-06-26 17:00 |  |  |  | 44h |
| 121 | 1.2.5.2.2.2.1 | Change Password Module | manual | 0.5d | 2014-06-19 13:00 | 2014-06-19 17:00 | 119 |  | DatPT | 4h |
| 122 | 1.2.5.2.2.2.2 | Forgot Password Module | manual | 0.5d | 2014-06-20 08:00 | 2014-06-20 12:00 | 121 |  | DatPT | 4h |
| 123 | 1.2.5.2.2.2.3 | Reading Document Module | manual | 1d | 2014-06-20 13:00 | 2014-06-23 12:00 | 122 |  | DatPT | 8h |
| 124 | 1.2.5.2.2.2.4 | Training Listening Module | manual | 0.5d | 2014-06-23 13:00 | 2014-06-23 17:00 | 123 |  | DatPT | 4h |
| 125 | 1.2.5.2.2.2.5 | Listening Conversation Module | manual | 1d | 2014-06-24 08:00 | 2014-06-24 17:00 | 124 |  | DatPT | 8h |
| 126 | 1.2.5.2.2.2.6 | Doing Test Module | manual | 2d | 2014-06-25 08:00 | 2014-06-26 17:00 | 125 |  | DatPT | 16h |
| 127 | 1.2.5.3 | Submit report no.4 First version | milestone, manual | 0d | 2014-06-29 08:00 | 2014-06-29 08:00 | 126 |  | MinhPT |  |
| 128 | 1.2.5.4 | Review and update comments report #4 | manual | 0.25d | 2014-06-30 08:00 | 2014-06-30 10:00 | 127 |  | MinhPT | 2h |
| 129 | 1.2.5.5 | Progress Report 4 | manual | 0.5d | 2014-06-30 10:00 | 2014-06-30 15:00 | 128 |  | TuanNN | 4h |
| 130 | 1.2.5.6 | Submit report no.4 final version | milestone, manual | 0d | 2014-06-30 13:00 | 2014-06-30 13:00 | 128 |  | MinhPT |  |
| 131 | 1.2.6 | **Coding** |  | 8d | 2014-06-20 08:00 | 2014-07-01 17:00 |  |  |  | 64h |
| 132 | 1.2.6.1 | **Part 1** |  | 8d | 2014-06-20 08:00 | 2014-07-01 17:00 |  | 0d |  | 64h |
| 133 | 1.2.6.1.1 | Admin’s account management Module | manual | 1d | 2014-06-20 08:00 | 2014-06-20 17:00 | 99 |  | NamLD | 8h |
| 134 | 1.2.6.1.2 | Management Member’s account Module | manual | 1d | 2014-06-23 08:00 | 2014-06-23 17:00 | 133 |  | NamLD | 8h |
| 135 | 1.2.6.1.3 | Vocabulary Management Module | manual | 0.5d | 2014-06-24 08:00 | 2014-06-24 12:00 | 134 |  | NamLD | 4h |
| 136 | 1.2.6.1.4 | Grammar Management Module | manual | 0.5d | 2014-06-24 13:00 | 2014-06-24 17:00 | 135 |  | NamLD | 4h |
| 137 | 1.2.6.1.5 | Reading Document Management Module | manual | 1d | 2014-06-25 08:00 | 2014-06-25 17:00 | 136 |  | NamLD | 8h |
| 138 | 1.2.6.1.6 | Conversation management Module | manual | 1d | 2014-06-26 08:00 | 2014-06-26 17:00 | 137 |  | NamLD | 8h |
| 139 | 1.2.6.1.7 | Video Management Module | manual | 0.5d | 2014-06-27 08:00 | 2014-06-27 12:00 | 138 |  | NamLD | 4h |
| 140 | 1.2.6.1.8 | Listening Article Management Module | manual | 0.5d | 2014-06-27 13:00 | 2014-06-27 17:00 | 139 |  | NamLD | 4h |
| 141 | 1.2.6.1.9 | Doing test management Module | manual | 1d | 2014-06-30 08:00 | 2014-06-30 17:00 | 140 |  | NamLD | 8h |
| 142 | 1.2.6.1.10 | Contact's content management Module | manual | 1d | 2014-07-01 08:00 | 2014-07-01 17:00 | 141 |  | NamLD | 8h |

| ID | WBS | Task | Type | Duration | Start | Finish | Predecessors | Total slack | Resources | Work |
| --- | --- | --- | --- | --- | --- | --- | --- | --- | --- | --- |
| 143 | 1.2.7 | **Testing** |  | 12d | 2014-06-16 08:00 | 2014-07-01 17:00 |  |  |  | 128h |
| 144 | 1.2.7.1 | **Create Test Document (Report 5)** |  | 5d | 2014-06-16 13:00 | 2014-06-23 13:00 |  | 0d |  | 40h |
| 145 | 1.2.7.1.1 | Create test plan | manual | 4.5d | 2014-06-16 13:00 | 2014-06-20 17:00 | 70 |  | MinhPT | 36h |
| 146 | 1.2.7.1.2 | Review and update Test Plan | manual | 0.5d | 2014-06-23 08:00 | 2014-06-23 12:00 | 145 |  | MinhPT | 4h |
| 147 | 1.2.7.1.3 | Submit Final Test Plan | milestone, manual | 0d | 2014-06-23 13:00 | 2014-06-23 13:00 | 146 |  | MinhPT |  |
| 148 | 1.2.7.2 | **Create Test Case** |  | 6d | 2014-06-23 08:00 | 2014-06-28 17:00 |  |  |  | 88h |
| 149 | 1.2.7.2.1 | Create Unit Test Case | manual | 5.5d | 2014-06-23 13:00 | 2014-06-28 17:00 | 147 |  | MinhPT; TuanNN | 88h |
| 150 | 1.3 | **Construction** |  | 28d | 2014-07-02 08:00 | 2014-08-08 17:00 |  |  |  | 460h |
| 151 | 1.3.1 | **Requirements & Design** |  | 2d | 2014-07-02 08:00 | 2014-07-03 17:00 |  |  |  | 12h |
| 152 | 1.3.1.1 | Refine requirement documents | manual | 1d | 2014-07-02 08:00 | 2014-07-02 17:00 | 35 |  | MinhPT | 8h |
| 153 | 1.3.1.2 | Refine design documents | manual | 0.5d | 2014-07-03 08:00 | 2014-07-03 12:00 | 152 |  | NamLD | 4h |
| 154 | 1.3.2 | **Coding & Unit Test** |  | 19d | 2014-07-03 08:00 | 2014-07-29 17:00 |  |  |  | 248h |
| 155 | 1.3.2.1 | **Part 1 (Continue)** |  | 7.5d | 2014-07-03 13:00 | 2014-07-14 17:00 |  |  |  | 92h |
| 156 | 1.3.2.1.1 | Homepage Module | manual | 1.5d | 2014-07-03 13:00 | 2014-07-04 17:00 | 153 |  | NamLD | 12h |
| 157 | 1.3.2.1.2 | **Search Module** |  | 7d | 2014-07-05 08:00 | 2014-07-14 17:00 |  |  |  | 48h |
| 158 | 1.3.2.1.2.1 | Search Sentences Module | manual | 2d | 2014-07-05 08:00 | 2014-07-07 17:00 | 156 |  | DatPT | 16h |
| 159 | 1.3.2.1.2.2 | Search Conversation Module | manual | 1d | 2014-07-08 08:00 | 2014-07-08 17:00 | 158 |  | DatPT | 8h |
| 160 | 1.3.2.1.2.3 | Search Video Module | manual | 1d | 2014-07-10 08:00 | 2014-07-10 17:00 | 159 |  | DatPT | 8h |
| 161 | 1.3.2.1.2.4 | Search Grammar Module | manual | 1d | 2014-07-11 08:00 | 2014-07-11 17:00 | 160 |  | DatPT | 8h |
| 162 | 1.3.2.1.2.5 | Search Specialized Japanese Module | manual | 1d | 2014-07-14 08:00 | 2014-07-14 17:00 | 161 |  | DatPT | 8h |
| 163 | 1.3.2.1.3 | Login/Logout Module | manual | 1d | 2014-07-07 08:00 | 2014-07-07 17:00 | 156 |  | NamLD | 8h |
| 164 | 1.3.2.1.4 | Register Account Module | manual | 1d | 2014-07-08 08:00 | 2014-07-08 17:00 | 163 |  | NamLD | 8h |
| 165 | 1.3.2.1.5 | Edit Profile Module | manual | 1d | 2014-07-09 08:00 | 2014-07-09 17:00 | 164 |  | NamLD | 8h |
| 166 | 1.3.2.1.6 | Forgot Password Module | manual | 1d | 2014-07-10 08:00 | 2014-07-10 17:00 | 165 |  | NamLD | 8h |
| 167 | 1.3.2.2 | Execute Unit Test | manual | 4d | 2014-07-11 08:00 | 2014-07-16 17:00 | 166 |  | MinhPT; TuanNN | 64h |

| ID | WBS | Task | Type | Duration | Start | Finish | Predecessors | Resources | Work |
| --- | --- | --- | --- | --- | --- | --- | --- | --- | --- |
| 168 | 1.3.2.3 | **Part 2** |  | 6d | 2014-07-18 08:00 | 2014-07-25 17:00 |  |  | 52h |
| 169 | 1.3.2.3.1 | Change Password Module | manual | 1d | 2014-07-18 08:00 | 2014-07-18 17:00 | 162 | DatPT | 8h |
| 170 | 1.3.2.3.2 | Forgot Password Module | manual | 1d | 2014-07-21 08:00 | 2014-07-21 17:00 | 169 | DatPT | 8h |
| 171 | 1.3.2.3.3 | Reading Document Module | manual | 1.5d | 2014-07-22 08:00 | 2014-07-23 12:00 | 170 | DatPT | 12h |
| 172 | 1.3.2.3.4 | Training Listening Module | manual | 0.5d | 2014-07-23 13:00 | 2014-07-23 17:00 | 171 | DatPT | 4h |
| 173 | 1.3.2.3.5 | Listening Conversation Module | manual | 1d | 2014-07-23 08:00 | 2014-07-23 17:00 | 193 | NamLD | 8h |
| 174 | 1.3.2.3.6 | Doing Test Module | manual | 1.5d | 2014-07-24 08:00 | 2014-07-25 12:00 | 173 | NamLD | 12h |
| 175 | 1.3.2.4 | Execute Unit Test | manual | 2.5d | 2014-07-25 13:00 | 2014-07-29 17:00 | 174 | MinhPT; TuanNN | 40h |
| 176 | 1.3.3 | **Testing** |  | 24d | 2014-07-02 08:00 | 2014-08-04 17:00 |  |  | 176h |
| 177 | 1.3.3.1 | **Create test documents (Continue)** |  | 7d | 2014-07-02 08:00 | 2014-07-10 17:00 |  |  | 72h |
| 178 | 1.3.3.1.1 | **Create test cases** |  | 4d | 2014-07-02 08:00 | 2014-07-07 17:00 |  |  | 48h |
| 179 | 1.3.3.1.1.1 | Create Integration Test Case | manual | 2d | 2014-07-03 08:00 | 2014-07-04 17:00 | 152 | MinhPT; TuanNN | 32h |
| 180 | 1.3.3.1.1.2 | Create System Test Case | manual | 1d | 2014-07-07 08:00 | 2014-07-07 17:00 | 179 | MinhPT; TuanNN | 16h |
| 181 | 1.3.3.1.2 | Create test checklist | manual | 1d | 2014-07-08 08:00 | 2014-07-08 17:00 | 180 | TuanNN | 8h |
| 182 | 1.3.3.1.3 | Review test documents | manual | 0.5d | 2014-07-09 08:00 | 2014-07-09 12:00 | 181 | MinhPT | 4h |
| 183 | 1.3.3.1.4 | Submit report no.5 First version | milestone, manual | 0d | 2014-07-09 13:00 | 2014-07-09 13:00 | 182 | MinhPT |  |
| 184 | 1.3.3.1.5 | Review report no.5 | manual | 0.5d | 2014-07-09 13:00 | 2014-07-09 17:00 | 183 | MinhPT; NamLD | 8h |
| 185 | 1.3.3.1.6 | Progress Report 5 | manual | 0.5d | 2014-07-09 13:00 | 2014-07-09 17:00 | 183 | TuanNN | 4h |
| 186 | 1.3.3.1.7 | Submit report no.5 final version | milestone, manual | 0d | 2014-07-10 08:00 | 2014-07-10 08:00 | 184 | MinhPT |  |
| 187 | 1.3.3.2 | **Execute test** |  | 13d | 2014-07-17 08:00 | 2014-08-04 17:00 |  |  | 104h |
| 188 | 1.3.3.2.1 | **Execute Test Part 1** |  | 4d | 2014-07-17 08:00 | 2014-07-22 17:00 |  |  | 52h |
| 189 | 1.3.3.2.1.1 | Fix bug Unit Test | manual | 1d | 2014-07-17 08:00 | 2014-07-17 17:00 | 167 | DatPT; NamLD | 16h |
| 190 | 1.3.3.2.1.2 | Execute Integration Test | manual | 1d | 2014-07-18 08:00 | 2014-07-18 17:00 | 189 | MinhPT; TuanNN | 16h |
| 191 | 1.3.3.2.1.3 | Fix bug Integration Test | manual | 1d | 2014-07-21 08:00 | 2014-07-21 17:00 | 190 | NamLD | 8h |
| 192 | 1.3.3.2.1.4 | Execute System Test | manual | 0.5d | 2014-07-22 08:00 | 2014-07-22 12:00 | 191 | MinhPT; TuanNN | 8h |
| 193 | 1.3.3.2.1.5 | Fix bug System Test | manual | 0.5d | 2014-07-22 13:00 | 2014-07-22 17:00 | 192 | NamLD | 4h |

| ID | WBS | Task | Type | Duration | Start | Finish | Predecessors | Resources | Work |
| --- | --- | --- | --- | --- | --- | --- | --- | --- | --- |
| 194 | 1.3.3.2.2 | **Execute Test Part 2** |  | 4d | 2014-07-30 08:00 | 2014-08-04 17:00 |  |  | 52h |
| 195 | 1.3.3.2.2.1 | Fix bug Unit Test | manual | 1d | 2014-07-30 08:00 | 2014-07-30 17:00 | 175 | DatPT; NamLD | 16h |
| 196 | 1.3.3.2.2.2 | Execute Integration Test | manual | 1d | 2014-07-31 08:00 | 2014-07-31 17:00 | 195 | MinhPT; TuanNN | 16h |
| 197 | 1.3.3.2.2.3 | Fix bug Integration Test | manual | 0.5d | 2014-08-01 08:00 | 2014-08-01 12:00 | 196 | DatPT; NamLD | 8h |
| 198 | 1.3.3.2.2.4 | Execute System Test | manual | 0.5d | 2014-08-01 13:00 | 2014-08-01 17:00 | 197 | MinhPT; TuanNN | 8h |
| 199 | 1.3.3.2.2.5 | Fix bug System Test | manual | 0.5d | 2014-08-04 08:00 | 2014-08-04 12:00 | 198 | NamLD | 4h |
| 200 | 1.3.3.2.3 | Complete Testing | milestone, manual | 0d | 2014-08-04 08:00 | 2014-08-04 08:00 | 198 | Project Team |  |
| 201 | 1.3.4 | Create report no.6 -Software User's Manual | manual | 1.5d | 2014-08-05 08:00 | 2014-08-06 12:00 | 198 | NamLD | 12h |
| 202 | 1.3.5 | Submit report no.6 First version | milestone, manual | 0d | 2014-08-07 13:00 | 2014-08-07 13:00 | 201 | NamLD |  |
| 203 | 1.3.6 | Review & update report no.6 | manual | 0.5d | 2014-08-07 13:00 | 2014-08-07 17:00 | 202 | NamLD | 4h |
| 204 | 1.3.7 | Progress Report 6 | manual | 0.5d | 2014-08-08 08:00 | 2014-08-08 12:00 | 203 | TuanNN | 4h |
| 205 | 1.3.8 | Submit report no.6 final version | milestone, manual | 0d | 2014-08-08 08:00 | 2014-08-08 08:00 | 203 | NamLD |  |
| 206 | 1.3.9 | Submit the last document and CD source code | manual | 0.5d | 2014-08-08 08:00 | 2014-08-08 12:00 | 205 | Project Team | 4h |
| 207 | 1.4 | **Transition** |  | 10d | 2014-08-11 08:00 | 2014-08-22 17:00 |  |  | 80h |
| 208 | 1.4.1 | **Preclosing** |  | 6d | 2014-08-11 08:00 | 2014-08-18 17:00 |  |  | 48h |
| 209 | 1.4.1.1 | Conduct project review-lessons learned | manual | 2d | 2014-08-11 08:00 | 2014-08-12 17:00 | 205 | Project Team | 16h |
| 210 | 1.4.1.2 | Complete program and documents | manual | 4d | 2014-08-13 08:00 | 2014-08-18 17:00 | 209 | Project Team | 32h |
| 211 | 1.4.2 | **Closing** |  | 5d | 2014-08-18 08:00 | 2014-08-22 17:00 |  |  | 32h |
| 212 | 1.4.2.1 | Prepare for presentation | manual | 2d | 2014-08-18 08:00 | 2014-08-19 17:00 |  | Project Team | 16h |
| 213 | 1.4.2.2 | Represent capstone project | manual | 2d | 2014-08-20 08:00 | 2014-08-21 17:00 | 212 | Project Team | 16h |
| 214 | 1.4.2.3 | Project completed | milestone, manual | 0d | 2014-08-22 08:00 | 2014-08-22 08:00 | 213 | Project Team |  |
