# UJD_VN_Project_Schedule

Schedule from MS Project, 2014-05-12 to 2014-08-27.

## Calendars

- Standard: Mon-Fri 08:00-12:00, 13:00-17:00; Sat-Sun off.

## Resources

| Resource |
| --- |
| Project Team |
| NamLD |
| MinhPT |
| DatPT |
| TuanNN |

## Schedule

| ID | WBS | Task | Type | Duration | Start | Finish | Predecessors | Total slack | Resources | Work |
| --- | --- | --- | --- | --- | --- | --- | --- | --- | --- | --- |
| 1 | 1 | **UJD_VN** |  | 78d | 2014-05-12 | 2014-08-27 |  |  |  | 2020h |
| 2 | 1.1 | **Initiation** |  | 15d | 2014-05-12 | 2014-06-02 |  | 0d |  | 576h |
| 3 | 1.1.1 | Develop project Idea | manual | 1d | 2014-05-12 | 2014-05-12 |  |  | Project Team | 8h |
| 4 | 1.1.2 | Kick-off meeting | manual | 1d | 2014-05-13 | 2014-05-13 | 3 |  | Project Team | 8h |
| 5 | 1.1.3 | Prepare project | manual | 1d | 2014-05-13 | 2014-05-13 | 3 |  | Project Team | 8h |
| 6 | 1.1.4 | System feasible study | manual | 1d | 2014-05-13 | 2014-05-13 |  |  | NamLD | 8h |
| 7 | 1.1.5 | Define business situation | manual | 1d | 2014-05-14 | 2014-05-14 | 6 |  | Project Team | 8h |
| 8 | 1.1.6 | Define project and system scope | manual | 2d | 2014-05-15 | 2014-05-16 | 7 |  | Project Team | 16h |
| 9 | 1.1.7 | Develop report no.1: Introduction | manual | 2d | 2014-05-19 | 2014-05-20 | 8 |  | MinhPT | 16h |
| 10 | 1.1.8 | Review & update report no.1 : Draft vesion | manual | 0.5d | 2014-05-21 | 2014-05-21 | 9 |  | NamLD | 4h |
| 11 | 1.1.9 | Submit report no.1 draft version | manual | 0.5d | 2014-05-21 | 2014-05-21 | 10 |  | NamLD | 4h |
| 12 | 1.1.10 | Revise after got comments for report no.1 | manual | 1d | 2014-05-22 | 2014-05-22 | 11 |  | NamLD | 8h |
| 13 | 1.1.11 | Q & A Management | manual | 1d | 2014-05-22 | 2014-05-22 |  |  |  |  |
| 14 | 1.1.12 | Progress Report 1 | manual | 1d | 2014-05-22 | 2014-05-22 |  |  |  |  |
| 15 | 1.1.13 | Submit report no.1 final version | manual | 1d | 2014-05-23 | 2014-05-23 | 12 |  | NamLD | 8h |
| 16 | 1.1.14 | **Technologies** |  | 10d | 2014-05-14 | 2014-05-27 | 4 |  |  | 240h |
| 17 | 1.1.14.1 | Research development technology | manual | 3d | 2014-05-14 | 2014-05-16 |  |  | NamLD; DatPT; TuanNN | 72h |
| 18 | 1.1.14.2 | Install and configuration PHP with Xampp | manual | 1d | 2014-05-19 | 2014-05-19 | 17 |  | NamLD; DatPT; TuanNN | 24h |
| 19 | 1.1.14.3 | Study Xampp and MYSQL | manual | 6d | 2014-05-20 | 2014-05-27 | 18 |  | NamLD; DatPT; TuanNN | 144h |
| 20 | 1.1.15 | **Requirements** |  | 8d | 2014-05-16 | 2014-05-27 | 8 | 0d |  | 176h |
| 21 | 1.1.15.1 | Collect business requirements and processes | manual | 2d | 2014-05-16 | 2014-05-17 |  |  | MinhPT; NamLD | 32h |
| 22 | 1.1.15.2 | Create draft screen prototypes | manual | 6d | 2014-05-19 | 2014-05-26 | 21 |  | DatPT; TuanNN | 96h |
| 23 | 1.1.15.3 | Complete draft screen prototypes | milestone, manual | 0d | 2014-05-27 | 2014-05-27 | 22 |  | DatPT; NamLD; TuanNN |  |
| 24 | 1.1.15.4 | Review and edit sceen prototypes | manual | 2d | 2014-05-26 | 2014-05-27 |  |  | DatPT; NamLD; TuanNN | 48h |

| ID | WBS | Task | Type | Duration | Start | Finish | Predecessors | Total slack | Resources | Work |
| --- | --- | --- | --- | --- | --- | --- | --- | --- | --- | --- |
| 25 | 1.1.16 | **Develop Project Plan** |  | 5d | 2014-05-26 | 2014-06-02 | 15 | 0d |  | 64h |
| 26 | 1.1.16.1 | Develop project definition | manual | 0.5d | 2014-05-26 | 2014-05-26 | 15 |  | NamLD | 4h |
| 27 | 1.1.16.2 | Create Work breakdown structure | manual | 0.5d | 2014-05-26 | 2014-05-26 | 15 |  | NamLD | 4h |
| 28 | 1.1.16.3 | Create project schedule | manual | 1d | 2014-05-26 | 2014-05-27 | 27 |  | NamLD | 8h |
| 29 | 1.1.16.4 | Review project management plan | manual | 0.5d | 2014-05-27 | 2014-05-27 | 28 |  | MinhPT; NamLD | 8h |
| 30 | 1.1.16.5 | Update project management plan | manual | 0.5d | 2014-05-28 | 2014-05-28 | 29 |  | MinhPT; NamLD | 8h |
| 31 | 1.1.16.6 | Develop report no.2: Project management Plan | manual | 1.5d | 2014-05-28 | 2014-05-29 | 30 |  | MinhPT; NamLD | 24h |
| 32 | 1.1.16.7 | Submit report no.2 Draft version | milestone, manual | 0d | 2014-05-30 | 2014-05-30 | 31 |  | NamLD |  |
| 33 | 1.1.16.8 | Revise after got comments for report no.2 | manual | 1d | 2014-05-30 | 2014-05-30 | 32 |  | NamLD | 8h |
| 34 | 1.1.16.9 | Progress Report 2 | manual | 1d | 2014-05-30 | 2014-05-30 |  |  |  |  |
| 35 | 1.1.16.10 | Submit report no.2 final version | milestone, manual | 0d | 2014-06-02 | 2014-06-02 | 33 |  | NamLD |  |
| 36 | 1.2 | **Solution** |  | 23d | 2014-06-02 | 2014-07-02 | 35 |  |  | 780h |
| 37 | 1.2.1 | **Project Management** |  | 3d | 2014-06-02 | 2014-06-04 | 35 |  |  | 32h |
| 38 | 1.2.1.1 | Refine project plan | manual | 2d | 2014-06-02 | 2014-06-03 | 35 |  | NamLD | 16h |
| 39 | 1.2.1.2 | Refine Report no. 2 | manual | 2d | 2014-06-02 | 2014-06-03 | 35 |  | NamLD | 16h |
| 40 | 1.2.2 | **Technologies** |  | 8d | 2014-06-02 | 2014-06-11 | 20 |  |  | 168h |
| 41 | 1.2.2.1 | Design database models | manual | 3d | 2014-05-28 | 2014-05-30 | 20 |  | DatPT; NamLD; TuanNN | 72h |
| 42 | 1.2.2.2 | Coding prototypes | manual | 6d | 2014-06-02 | 2014-06-09 | 20 |  | DatPT; TuanNN | 96h |
| 43 | 1.2.3 | **User Requirements Specification** |  | 5d | 2014-06-02 | 2014-06-06 | 21 |  |  | 80h |
| 44 | 1.2.3.1 | Create draft requirements | manual | 2d | 2014-06-02 | 2014-06-03 | 21 |  | MinhPT | 16h |
| 45 | 1.2.3.2 | Complete draft requirements | milestone, manual | 0d | 2014-06-04 | 2014-06-04 | 44 |  | MinhPT |  |
| 46 | 1.2.3.3 | Develop Use-case model | manual | 1d | 2014-06-04 | 2014-06-04 | 45 |  | MinhPT; NamLD | 16h |
| 47 | 1.2.3.4 | Develop main functions and processes | manual | 2d | 2014-06-05 | 2014-06-06 | 46 |  | DatPT; NamLD; TuanNN | 48h |
| 48 | 1.2.4 | **Software Requirements Specification** |  | 7d | 2014-06-06 | 2014-06-16 | 43 |  |  | 96h |
| 49 | 1.2.4.1 | **System Requirement Specification** |  | 3d | 2014-06-06 | 2014-06-10 | 43 |  |  | 64h |
| 50 | 1.2.4.1.1 | Develop UC Specification for Search Function | manual | 2d | 2014-06-06 | 2014-06-09 | 46 |  | MinhPT | 16h |
| 51 | 1.2.4.1.2 | Develop UC Specification for Contact Admin Function | manual | 2d | 2014-06-06 | 2014-06-09 | 46 |  | DatPT | 16h |
| 52 | 1.2.4.1.3 | Develop UC Specification for Do Test Function | manual | 2d | 2014-06-06 | 2014-06-09 | 46 |  | NamLD | 16h |
| 53 | 1.2.4.1.4 | Develop UC Specification for Reading Document Function | manual | 2d | 2014-06-09 | 2014-06-10 | 46 |  | TuanNN | 16h |

| ID | WBS | Task | Type | Duration | Start | Finish | Predecessors | Resources | Work |
| --- | --- | --- | --- | --- | --- | --- | --- | --- | --- |
| 54 | 1.2.4.2 | **Non-functional Requirements Specification** |  | 5d | 2014-06-06 | 2014-06-12 |  |  |  |
| 55 | 1.2.4.2.1 | Develop User Interface requirements | manual | 3d | 2014-06-06 | 2014-06-10 |  |  |  |
| 56 | 1.2.4.2.2 | Develop Performance requirements | manual | 2d | 2014-06-10 | 2014-06-11 |  |  |  |
| 57 | 1.2.4.3 | Entity Relationship Diagram (ERD) | manual | 2d | 2014-06-02 | 2014-06-03 | 41 | NamLD | 16h |
| 58 | 1.2.4.4 | Submit report no.3 Draft version | milestone, manual | 0d | 2014-06-10 | 2014-06-10 | 57 | NamLD |  |
| 59 | 1.2.4.5 | Revise after got comments of Report no.3 | manual | 2d | 2014-06-10 | 2014-06-11 | 58 | NamLD | 16h |
| 60 | 1.2.4.6 | Progress Report 3 | manual | 1d | 2014-06-11 | 2014-06-11 |  |  |  |
| 61 | 1.2.4.7 | Submit report no.3 final version | milestone, manual | 0d | 2014-06-12 | 2014-06-12 | 59 | NamLD |  |
| 62 | 1.2.5 | **Design** |  | 12d | 2014-06-13 | 2014-06-30 |  |  | 404h |
| 63 | 1.2.5.1 | Create Design Overview | manual | 1d | 2014-06-13 | 2014-06-13 | 57 | NamLD | 8h |
| 64 | 1.2.5.2 | **System Architectural Design** |  | 4d | 2014-06-16 | 2014-06-19 | 41 |  | 52h |
| 65 | 1.2.5.2.1 | Define the system structure and collect system features | manual | 1d | 2014-06-16 | 2014-06-16 | 41 | NamLD | 8h |
| 66 | 1.2.5.2.2 | Study the common System Architeture | manual | 1d | 2014-06-17 | 2014-06-17 | 65 | DatPT; NamLD; TuanNN | 24h |
| 67 | 1.2.5.2.3 | Choice of System Architeture | manual | 0.5d | 2014-06-18 | 2014-06-18 | 66 | DatPT; NamLD; TuanNN | 12h |
| 68 | 1.2.5.2.4 | Discussion of Alternative Design | manual | 1d | 2014-06-18 | 2014-06-19 | 67 | NamLD | 8h |
| 69 | 1.2.5.3 | **Detailed Design** |  | 8d | 2014-06-19 | 2014-06-30 |  |  | 296h |
| 70 | 1.2.5.3.1 | Detail database design | manual | 3d | 2014-06-19 | 2014-06-22 | 41 | NamLD | 24h |
| 71 | 1.2.5.3.2 | **Component Diagram** |  | 5d | 2014-06-19 | 2014-06-25 | 57 |  | 48h |
| 72 | 1.2.5.3.2.1 | Define the component | manual | 2d | 2014-06-19 | 2014-06-20 |  | NamLD | 16h |
| 73 | 1.2.5.3.2.2 | General component diagram | manual | 1d | 2014-06-23 | 2014-06-23 | 72 | NamLD | 8h |
| 74 | 1.2.5.3.2.3 | Detail component diagram | manual | 1d | 2014-06-24 | 2014-06-24 | 73 | DatPT; NamLD; TuanNN | 24h |
| 75 | 1.2.5.3.3 | **Detailed description of components** |  | 2d | 2014-06-24 | 2014-06-25 |  |  | 56h |
| 76 | 1.2.5.3.3.1 | Create Class diagram | manual | 1d | 2014-06-23 | 2014-06-23 | 70 | NamLD | 8h |
| 77 | 1.2.5.3.3.2 | Detail description of component (Client component) | manual | 2d | 2014-06-24 | 2014-06-25 | 76 | DatPT; NamLD; TuanNN | 48h |

| ID | WBS | Task | Type | Duration | Start | Finish | Predecessors | Resources | Work |
| --- | --- | --- | --- | --- | --- | --- | --- | --- | --- |
| 78 | 1.2.5.3.4 | **User Interface Design** |  | 8d | 2014-06-19 | 2014-06-30 |  |  | 168h |
| 79 | 1.2.5.3.4.1 | Create UI for Login Module | manual | 4d | 2014-06-23 | 2014-06-26 | 70 | DatPT | 32h |
| 80 | 1.2.5.3.4.2 | Create UI of Search Module | manual | 2d | 2014-06-23 | 2014-06-24 | 70 | NamLD | 16h |
| 81 | 1.2.5.3.4.3 | Create UI of Contact Admin Module | manual | 2d | 2014-06-24 | 2014-06-25 | 70 | DatPT | 16h |
| 82 | 1.2.5.3.4.4 | Create UI of Admin functions | manual | 3d | 2014-06-23 | 2014-06-25 | 70 | NamLD | 24h |
| 83 | 1.2.5.3.4.5 | Create UI of Do Test Module | manual | 2d | 2014-06-25 | 2014-06-26 | 70 | NamLD | 16h |
| 84 | 1.2.5.3.4.6 | Create UI of Reading Document Module | manual | 3d | 2014-06-24 | 2014-06-26 | 70 | TuanNN | 24h |
| 85 | 1.2.5.3.4.7 | Create UI for Review Module | manual | 2d | 2014-06-25 | 2014-06-26 | 70 | TuanNN | 16h |
| 86 | 1.2.5.3.4.8 | Create UI for Listening Conversion Module | manual | 3d | 2014-06-24 | 2014-06-26 | 70 | NamLD | 24h |
| 87 | 1.2.5.4 | Submit report no.4 Draft version | milestone, manual | 0d | 2014-06-26 | 2014-06-26 |  | NamLD |  |
| 88 | 1.2.5.5 | Review and update comments report #4 | manual | 3d | 2014-06-26 | 2014-06-29 | 87 | NamLD; MinhPT | 48h |
| 89 | 1.2.5.6 | Progress Report 4 | manual | 1d | 2014-06-29 | 2014-06-29 |  |  |  |
| 90 | 1.2.5.7 | Submit report no.4 final version | milestone, manual | 0d | 2014-06-30 | 2014-06-30 | 88 | NamLD |  |
| 91 | 1.3 | **Construction** |  | 35d | 2014-06-30 | 2014-08-15 |  |  | 576h |
| 92 | 1.3.1 | **Requirements & Design** |  | 3d | 2014-06-30 | 2014-07-02 |  |  | 80h |
| 93 | 1.3.1.1 | Refine requirement documents | manual | 2d | 2014-06-30 | 2014-07-01 | 48 | MinhPT; NamLD | 32h |
| 94 | 1.3.1.2 | Refine design documents | manual | 2d | 2014-07-01 | 2014-07-02 | 62 | DatPT; NamLD; TuanNN | 48h |
| 95 | 1.3.2 | **Coding & Unit Test** |  | 19d | 2014-07-03 | 2014-07-29 |  |  | 232h |
| 96 | 1.3.2.1 | Login Module | manual | 5d | 2014-07-04 | 2014-07-10 | 94 | DatPT | 40h |
| 97 | 1.3.2.2 | Search Module | manual | 5d | 2014-07-04 | 2014-07-10 | 94 | NamLD | 40h |
| 98 | 1.3.2.3 | Admin Module | manual | 5d | 2014-07-10 | 2014-07-16 | 94 | NamLD | 40h |
| 99 | 1.3.2.4 | Contact Admin Module | manual | 3d | 2014-07-17 | 2014-07-20 | 98 | DatPT | 24h |
| 100 | 1.3.2.5 | Listening Conversation Module | manual | 3d | 2014-07-20 | 2014-07-22 | 98 | DatPT | 24h |
| 101 | 1.3.2.6 | Doing Test Module | manual | 4d | 2014-07-22 | 2014-07-25 | 98 | TuanNN | 32h |
| 102 | 1.3.2.7 | Review Module | manual | 2d | 2014-07-25 | 2014-07-28 | 98 | TuanNN | 16h |
| 103 | 1.3.2.8 | Reading Document Module | manual | 2d | 2014-07-28 | 2014-07-29 | 98 | TuanNN | 16h |
| 104 | 1.3.2.9 | Complete coding | milestone, manual | 0d | 2014-07-29 | 2014-07-29 |  |  |  |

| ID | WBS | Task | Type | Duration | Start | Finish | Predecessors | Resources | Work |
| --- | --- | --- | --- | --- | --- | --- | --- | --- | --- |
| 105 | 1.3.3 | **Testing** |  | 31d | 2014-07-03 | 2014-08-14 |  |  | 224h |
| 106 | 1.3.3.1 | **Create test documents (Report 5)** |  | 12d | 2014-07-03 | 2014-07-18 |  |  |  |
| 107 | 1.3.3.1.1 | Create test plan | manual | 2d | 2014-07-03 | 2014-07-04 | 93 |  |  |
| 108 | 1.3.3.1.2 | Create test cases | manual | 4d | 2014-07-07 | 2014-07-10 | 107 |  |  |
| 109 | 1.3.3.1.3 | Create test checklist | manual | 3d | 2014-07-07 | 2014-07-09 | 107 |  |  |
| 110 | 1.3.3.1.4 | Review test documents | manual | 2d | 2014-07-10 | 2014-07-11 | 109 |  |  |
| 111 | 1.3.3.1.5 | Submit report no.5 Draft version | milestone, manual | 0d | 2014-07-15 | 2014-07-15 |  |  |  |
| 112 | 1.3.3.1.6 | Review report no.5 | manual | 2d | 2014-07-15 | 2014-07-16 | 111 |  |  |
| 113 | 1.3.3.1.7 | Progress Report 5 | manual | 1d | 2014-07-17 | 2014-07-17 | 112 |  |  |
| 114 | 1.3.3.1.8 | Submit report no.5 final version | milestone, manual | 0d | 2014-07-18 | 2014-07-18 | 112 |  |  |
| 115 | 1.3.3.2 | Execute functional test | manual | 13d | 2014-07-18 | 2014-08-05 |  | DatPT; MinhPT | 208h |
| 116 | 1.3.3.3 | Execute regression test | manual | 2d | 2014-08-06 | 2014-08-07 | 115 | MinhPT | 16h |
| 117 | 1.3.3.4 | Deliver tested codes (Code demo 1) | milestone, manual | 0d | 2014-08-08 | 2014-08-08 | 116 | MinhPT |  |
| 118 | 1.3.4 | Create report no.6 -Software User's Manual | manual | 3d | 2014-08-08 | 2014-08-12 | 117 | NamLD | 24h |
| 119 | 1.3.5 | Submit report no.6 Draft version | milestone, manual | 0d | 2014-08-13 | 2014-08-13 | 118 | NamLD |  |
| 120 | 1.3.6 | Review & update report no.6 | manual | 2d | 2014-08-13 | 2014-08-14 | 119 | NamLD | 16h |
| 121 | 1.3.7 | Progress Report 6 | manual | 1d | 2014-08-15 | 2014-08-15 |  |  |  |
| 122 | 1.3.8 | Submit report no.6 final version | milestone, manual | 0d | 2014-08-15 | 2014-08-15 | 120 | NamLD |  |
| 123 | 1.4 | **Transition** |  | 9d | 2014-08-15 | 2014-08-27 |  |  | 88h |
| 124 | 1.4.1 | **Preclosing** |  | 8d | 2014-08-15 | 2014-08-26 | 122 |  | 56h |
| 125 | 1.4.1.1 | Conduct project review-lessons learned | manual | 2d | 2014-08-15 | 2014-08-18 |  | Project Team | 16h |
| 126 | 1.4.1.2 | Complete program and documents | manual | 5d | 2014-08-18 | 2014-08-22 |  | Project Team | 40h |
| 127 | 1.4.1.3 | Submit the last document and CD source code | milestone, manual | 0d | 2014-08-23 | 2014-08-23 | 126 | Project Team |  |
| 128 | 1.4.2 | **Closing** |  | 4d | 2014-08-23 | 2014-08-27 |  |  | 32h |
| 129 | 1.4.2.1 | Prepare for presentation | manual | 2d | 2014-08-23 | 2014-08-24 |  | Project Team | 16h |
| 130 | 1.4.2.2 | Represent capstone project | manual | 2d | 2014-08-25 | 2014-08-26 | 129 | Project Team | 16h |
| 131 | 1.4.2.3 | Project completed | milestone, manual | 0d | 2014-08-27 | 2014-08-27 | 130 | Project Team |  |
